# Plan Proyecto 3

Schedule from MS Project, 2005-09-12 to 2006-02-06.
Deloitte

## Calendars

- Estándar: Mon-Fri 08:00-14:00, 15:00-17:00; Sat-Sun off.

## Resources

| Resource |
| --- |
| Analista 1 |
| Analista 2 |
| Analista 3 |
| Analista 4 |
| Programador 1 |
| Programador 2 |
| Programador 3 |
| Programador 4 |
| Tester 1 |
| Tester |
| Migrador de datos |
| Tester 2 |
| Capacitador |
| Instructor |
| Tester 3 |
| Tester 4 |
| Implementador |
| Lider de proyecto |
| Líder de proyecto |

## Schedule

| ID | WBS | Task | Duration | Start | Finish | Predecessors | Total slack | Free slack | Resources | Work |
| --- | --- | --- | --- | --- | --- | --- | --- | --- | --- | --- |
| 1 | 1 | **Proyecto Final** | 105.12d? | 2005-09-12 | 2006-02-06 |  | 0d |  |  | 2198h |
| 2 | 1.1 | **Requerimientos** | 4.5d | 2005-09-12 | 2005-09-16 |  | 0d |  |  | 72h |
| 3 | 1.1.1 | Casos de uso PyP | 18h | 2005-09-12 | 2005-09-14 |  | 9.38d | 0d | Analista 1 | 18h |
| 4 | 1.1.2 | Casos de uso PyE | 27h | 2005-09-12 | 2005-09-15 |  | 0d |  | Analista 2 | 27h |
| 5 | 1.1.3 | Casos de uso Facturación | 18h | 2005-09-14 | 2005-09-16 | 3 | 9.38d | 0d | Analista 1 | 18h |
| 6 | 1.1.4 | Casos de uso HdR | 9h | 2005-09-15 | 2005-09-16 | 4 | 0d |  | Analista 2 | 9h |
| 8 | 1.2 | **Análisis** | 6d | 2005-09-16 | 2005-09-26 |  | 0d |  |  | 120h |
| 9 | 1.2.1 | Modelo de análisis PyP | 24h | 2005-09-16 | 2005-09-21 | 5 | 9.38d | 0d | Analista 1 | 24h |
| 10 | 1.2.2 | Modelo de análisis PyE | 36h | 2005-09-16 | 2005-09-22 | 6 | 0d |  | Analista 2 | 36h |
| 11 | 1.2.3 | Modelo de análisis Facturación | 24h | 2005-09-21 | 2005-09-26 | 9 | 9.38d | 0d | Analista 1 | 24h |
| 12 | 1.2.4 | Modelo de análisis HdR | 12h | 2005-09-23 | 2005-09-26 | 10 | 103.25d |  | Analista 2 | 12h |
| 13 | 1.2.5 | Especificación Req. Soft. | 24h | 2005-09-16 | 2005-09-21 | 3, 4, 5, 6 | 106.25d |  | Analista 3 | 24h |
| 15 | 1.3 | **Diseño** | 19.5d | 2005-09-23 | 2005-10-20 |  | 0d |  |  | 288h |
| 16 | 1.3.1 | Modelo de diseño PyP | 72h | 2005-09-26 | 2005-10-07 | 11 | 9.38d | 0d | Analista 1 | 72h |
| 17 | 1.3.2 | Modelo de diseño PyE | 108h | 2005-09-23 | 2005-10-12 | 10 | 0d |  | Analista 2 | 108h |
| 18 | 1.3.3 | Modelo de diseño Facturación | 72h | 2005-10-07 | 2005-10-20 | 16 | 3.38d | 0d | Analista 1 | 72h |
| 19 | 1.3.4 | Modelo de diseño HdR | 36h | 2005-10-12 | 2005-10-18 | 17 | 13.88d | 0d | Analista 2 | 36h |
| 21 | 1.4 | **Desarrollo** | 39d | 2005-10-07 | 2005-12-01 |  | 3d |  |  | 804h |
| 22 | 1.4.1 | Desarrollo PyP | 192h | 2005-10-07 | 2005-11-10 | 16 | 9.38d | 0d | Programador 1 | 192h |
| 23 | 1.4.2 | Desarrollo PyE | 288h | 2005-10-12 | 2005-12-01 | 17 | 0d |  | Programador 2 | 288h |
| 24 | 1.4.3 | Desarrollo Facturación | 192h | 2005-10-20 | 2005-11-23 | 18 | 3.38d | 0d | Programador 3 | 192h |
| 25 | 1.4.4 | Desarrollo HdR | 96h | 2005-10-19 | 2005-11-03 | 19 | 13.88d | 0d | Programador 4 | 96h |
| 26 | 1.4.5 | Preparación datos iniciales | 36h | 2005-11-23 | 2005-11-29 | 24 | 18.38d |  | Migrador de datos | 36h |
| 27 | 1.5 | **Testing y Documentación** | 47.62d | 2005-11-04 | 2006-01-10 |  | 0d |  |  | 578h |
| 28 | 1.5.1 | Pruebas unitarias PyP | 90h | 2005-11-10 | 2005-11-25 | 22 | 9.38d | 0d | Tester 1 | 90h |
| 29 | 1.5.2 | Pruebas unitarias PyE | 135h | 2005-12-01 | 2005-12-26 | 23, 31 | 0d |  | Tester 1 | 135h |
| 30 | 1.5.3 | Pruebas unitarias Facturación | 90h | 2005-11-25 | 2005-12-12 | 28, 24 | 9.38d |  | Tester 2 | 90h |
| 31 | 1.5.4 | Pruebas unitarias HdR | 45h | 2005-11-04 | 2005-11-11 | 25, 17 | 13.88d |  | Tester 2 | 45h |
| 32 | 1.5.5 | Test integración | 90h | 2005-12-26 | 2006-01-10 | 28, 29, 30, 31, 26 | 0d |  | Tester 3 | 90h |
| 33 | 1.5.6 | Manual de usuario PyP | 32h | 2005-11-10 | 2005-11-16 | 36, 22 | 24.62d | 5d | Instructor | 32h |
| 34 | 1.5.7 | Manual de usuario PyE | 48h | 2005-12-01 | 2005-12-09 | 23, 35 | 17.62d | 0d | Instructor | 48h |
| 35 | 1.5.8 | Manual de usuario Facturación | 32h | 2005-11-23 | 2005-11-29 | 24, 33 | 19.62d | 2d | Instructor | 32h |
| 36 | 1.5.9 | Manual de usuario HdR | 16h | 2005-11-04 | 2005-11-07 | 25 | 27.12d | 2.5d | Instructor | 16h |

| ID | WBS | Task | Type | Duration | Start | Finish | Predecessors | Total slack | Free slack | Resources | Work |
| --- | --- | --- | --- | --- | --- | --- | --- | --- | --- | --- | --- |
| 38 | 1.6 | **Implementación** |  | 40.62d? | 2005-12-09 | 2006-02-06 |  | 0d |  |  | 336h |
| 39 | 1.6.1 | Implementación del sistema |  | 40h | 2005-12-27 | 2006-01-03 | 43 | 5.25d |  | Implementador | 40h |
| 40 | 1.6.2 | Cut-over | milestone | 1d? | 2006-01-10 | 2006-01-11 | 32, 39, 42 | 0d |  |  |  |
| 41 | 1.6.3 | Migración de datos |  | 12h | 2006-01-11 | 2006-01-13 | 40, 26, 32 | 0d |  | Migrador de datos | 12h |
| 42 | 1.6.4 | Capacitación |  | 36h | 2005-12-09 | 2005-12-15 | 33, 34, 35, 36 | 17.62d |  | Instructor | 36h |
| 43 | 1.6.5 | Validación |  | 8h | 2005-12-26 | 2005-12-27 | 28, 29, 30, 31 | 5.25d | 0d | Líder de proyecto | 8h |
| 44 | 1.6.6 | Go-live | milestone | 1d | 2006-01-13 | 2006-01-16 | 41 | 0d |  |  |  |
| 45 | 1.6.7 | Soporte técnico |  | 120h | 2006-01-16 | 2006-02-06 | 44 | 0d |  | Programador 1 | 120h |
| 46 | 1.6.8 | Soporte funcional |  | 120h | 2006-01-16 | 2006-02-06 | 44 | 0d |  | Analista 3 | 120h |
