# v1.3

Schedule from MS Project, 2008-09-01 to 2009-10-30, 4 hours a day, costs in $, A marks actual dates.
F.G.E.

## Calendars

- Estándar: Mon-Fri 09:00-13:00, 15:00-19:00; Sat-Sun off. Exceptions (off unless hours are given): 2008-09-09 09:00-13:00.

## Resources

| Resource | Rate |
| --- | --- |
| Analista 1 | 25 |
| Analista 2 | 25 |
| Lider Proyecto | 50 |
| Desarrollador 1 | 25 |
| Desarrollador 2 | 25 |
| Analista 3 | 25 |
| Analista 4 | 25 |
| Tester 1 | 25 |
| Tester 2 | 25 |

## Schedule

| ID | WBS | Task | Type | Duration | Start | Finish | Predecessors | Complete | Remaining | Total slack | Constraint | Resources | Work | Actual work | Cost | Actual cost |
| --- | --- | --- | --- | --- | --- | --- | --- | --- | --- | --- | --- | --- | --- | --- | --- | --- |
| 1 | 1 | **Cronograma Proyeto SETI** |  | 608d | 2008-09-01 A | 2009-10-30 |  | 97% | 18.42d | 0d |  |  | 2437.36h | 2222.03h | 66,334.1 | 59,700.77 |
| 2 | 1.1 | **Relevamiento** |  | 19d | 2008-09-01 A | 2008-09-12 A |  | 100% |  |  |  |  | 56h | 56h | 1,600 | 1,600 |
| 3 | 1.1.1 | Relevamiento - Entrevistas |  | 2d | 2008-09-01 A | 2008-09-01 A |  | 100% |  |  | start no earlier than 2008-09-01 | Analista 1 | 8h | 8h | 200 | 200 |
| 4 | 1.1.2 | **Documentación Inicial** |  | 17d | 2008-09-02 A | 2008-09-12 A |  | 100% |  |  |  |  | 48h | 48h | 1,400 | 1,400 |
| 5 | 1.1.2.1 | Documentación Inicial - Desarrollo |  | 16d | 2008-09-02 A | 2008-09-11 A | 3 | 100% |  |  |  | Analista 1 [25%]; Analista 2 [25%]; Analista 3 [25%]; Analista 4 [25%] | 40h | 40h | 1,000 | 1,000 |
| 6 | 1.1.2.2 | Documentación Inicial - Integración |  | 2d | 2008-09-12 A | 2008-09-12 A | 5 | 100% |  |  |  | Lider Proyecto | 8h | 8h | 400 | 400 |
| 7 | 1.1.2.3 | Documentacion Inicial - Entrega | milestone | 0d | 2008-09-12 A | 2008-09-12 A | 6 | 100% |  |  |  | Lider Proyecto |  |  |  |  |
| 8 | 1.2 | **Análisis** |  | 68d | 2008-09-15 A | 2008-10-30 A | 4 | 100% |  |  |  |  | 340.7h | 340.7h | 9,267.43 | 9,267.43 |
| 9 | 1.2.1 | **Casos de Uso de Negocio** |  | 26d | 2008-09-15 A | 2008-10-01 A |  | 100% |  |  |  |  | 152h | 152h | 3,800 | 3,800 |
| 10 | 1.2.1.1 | C.U.Negocio - Clientes |  | 2d | 2008-09-15 A | 2008-09-15 A |  | 100% |  |  |  | Analista 1 | 8h | 8h | 200 | 200 |
| 11 | 1.2.1.2 | C.U.Negocio - Proveedores |  | 2d | 2008-09-15 A | 2008-09-15 A |  | 100% |  |  |  | Analista 2 | 8h | 8h | 200 | 200 |
| 12 | 1.2.1.3 | C.U.Negocio - Insumos |  | 2d | 2008-09-15 A | 2008-09-15 A |  | 100% |  |  |  | Analista 3 | 8h | 8h | 200 | 200 |
| 13 | 1.2.1.4 | C.U.Negocio - Seguridad |  | 12d | 2008-09-16 A | 2008-09-23 A | 11 | 100% |  |  |  | Analista 3 | 48h | 48h | 1,200 | 1,200 |
| 14 | 1.2.1.5 | C.U.Negocio - Personal Técnico |  | 2d | 2008-09-16 A | 2008-09-16 A | 11 | 100% |  |  |  | Analista 4 | 8h | 8h | 200 | 200 |
| 15 | 1.2.1.6 | C.U.Negocio - Gestión Tickets |  | 12d | 2008-09-24 A | 2008-10-01 A | 13 | 100% |  |  |  | Analista 3 | 48h | 48h | 1,200 | 1,200 |
| 16 | 1.2.1.7 | C.U.Negocio - Alertas |  | 6d | 2008-09-24 A | 2008-09-26 A | 13 | 100% |  |  |  | Analista 4 | 24h | 24h | 600 | 600 |
| 17 | 1.2.2 | **Casos de Uso de Sistema** |  | 36d | 2008-09-16 A | 2008-10-09 A |  | 100% |  |  |  |  | 152h | 152h | 3,800 | 3,800 |
| 18 | 1.2.2.1 | Módulo Clientes |  | 2d | 2008-09-16 A | 2008-09-16 A | 10 | 100% |  |  |  | Analista 1 | 8h | 8h | 200 | 200 |
| 19 | 1.2.2.2 | Módulo Proveedores |  | 2d | 2008-09-16 A | 2008-09-16 A | 11 | 100% |  |  |  | Analista 2 | 8h | 8h | 200 | 200 |
| 20 | 1.2.2.3 | Módulo Insumos |  | 2d | 2008-09-17 A | 2008-09-17 A | 12, 18 | 100% |  |  |  | Analista 1 | 8h | 8h | 200 | 200 |
| 21 | 1.2.2.4 | Módulo Seguridad |  | 12d | 2008-09-24 A | 2008-10-01 A | 19, 13 | 100% |  |  |  | Analista 2 | 48h | 48h | 1,200 | 1,200 |
| 22 | 1.2.2.5 | Módulo Personal Técnico |  | 2d | 2008-09-17 A | 2008-09-17 A | 19, 14 | 100% |  |  |  | Analista 4 | 8h | 8h | 200 | 200 |
| 23 | 1.2.2.6 | Módulo Gestión Tickets |  | 12d | 2008-10-02 A | 2008-10-09 A | 21, 15 | 100% |  |  |  | Analista 1 | 48h | 48h | 1,200 | 1,200 |
| 24 | 1.2.2.7 | Módulo Alertas |  | 6d | 2008-10-02 A | 2008-10-06 A | 21, 16 | 100% |  |  |  | Analista 4 | 24h | 24h | 600 | 600 |

Notes:
- 20: Dependencia de la 18 por Solapamiento de Recursos

| ID | WBS | Task | Type | Duration | Start | Finish | Predecessors | Complete | Constraint | Resources | Work | Actual work | Cost | Actual cost |
| --- | --- | --- | --- | --- | --- | --- | --- | --- | --- | --- | --- | --- | --- | --- |
| 25 | 1.2.3 | **Modelo de Análisis** |  | 30d | 2008-10-10 A | 2008-10-30 A | 17 | 100% |  |  | 36.7h | 36.7h | 1,667.43 | 1,667.43 |
| 26 | 1.2.3.1 | Modelo de Análisis - Integración Documentación |  | 30d | 2008-10-10 A | 2008-10-30 A |  | 100% |  | Lider Proyecto [25%]; Analista 1 [75%] | 36.7h | 36.7h | 1,667.43 | 1,667.43 |
| 27 | 1.2.3.2 | Modelo de Análisis - Entrega | milestone | 0d | 2008-10-30 A | 2008-10-30 A | 26 | 100% |  | Lider Proyecto |  |  |  |  |
| 28 | 1.3 | **Diseño** |  | 28.7d | 2008-10-30 A | 2008-11-20 A | 8 | 100% |  |  | 112h | 112h | 2,900 | 2,900 |
| 29 | 1.3.1 | Diseño - Diagrama de Clases |  | 6d | 2008-10-30 A | 2008-11-04 A |  | 100% |  | Analista 1 | 24h | 24h | 600 | 600 |
| 30 | 1.3.2 | Diseño - Diagrama de Interacción |  | 6d | 2008-11-04 A | 2008-11-07 A | 29 | 100% |  | Analista 2 | 24h | 24h | 600 | 600 |
| 31 | 1.3.3 | Diseño - Diagrama de Secuencia |  | 6d | 2008-11-07 A | 2008-11-12 A | 30 | 100% |  | Analista 3 | 24h | 24h | 600 | 600 |
| 32 | 1.3.4 | Diseño - Diagrama de Entidad Relación |  | 6d | 2008-11-12 A | 2008-11-17 A | 31 | 100% |  | Analista 4 | 24h | 24h | 600 | 600 |
| 33 | 1.3.5 | Diseño - Integración Documentación |  | 4d | 2008-11-17 A | 2008-11-19 A | 32 | 100% |  | Lider Proyecto [25%]; Analista 3 [75%] | 16h | 16h | 500 | 500 |
| 34 | 1.3.6 | Diseño - Entrega | milestone | 0d | 2008-11-20 A | 2008-11-20 A | 33 | 100% | start no earlier than 2008-11-20 | Lider Proyecto |  |  |  |  |
| 35 | 1.4 | Revisión de Entregas Realizadas |  | 30d | 2008-11-20 A | 2008-12-10 A | 2, 8, 28 | 100% |  | Lider Proyecto | 120h | 120h | 6,000 | 6,000 |
| 36 | 1.5 | Aprobación de la Cursada | milestone | 0d | 2008-12-10 A | 2008-12-10 A | 35 | 100% |  |  |  |  |  |  |
| 37 | 1.6 | Receso Vacacional |  | 160d | 2008-12-11 A | 2009-04-01 A | 36 | 100% |  |  |  |  |  |  |
| 38 | 1.7 | **Modelo de Testing** |  | 18d | 2009-04-02 A | 2009-04-14 A | 37 | 100% |  |  | 108h | 108h | 2,800 | 2,800 |
| 39 | 1.7.1 | Mod.Testing - Clientes |  | 4d | 2009-04-02 A | 2009-04-03 A |  | 100% |  | Analista 1 [50%] | 8h | 8h | 200 | 200 |
| 40 | 1.7.2 | Mod.Testing - Proveedores |  | 4d | 2009-04-02 A | 2009-04-03 A |  | 100% |  | Analista 2 [50%] | 8h | 8h | 200 | 200 |
| 41 | 1.7.3 | Mod.Testing - Insumos |  | 4d | 2009-04-02 A | 2009-04-03 A |  | 100% |  | Analista 3 [50%] | 8h | 8h | 200 | 200 |
| 42 | 1.7.4 | **Mod.Testing - Seguridad** |  | 12d | 2009-04-06 A | 2009-04-13 A |  | 100% |  |  | 24h | 24h | 600 | 600 |
| 43 | 1.7.4.1 | Submódulo Usuarios |  | 4d | 2009-04-06 A | 2009-04-07 A | 39 | 100% |  | Analista 1 [50%] | 8h | 8h | 200 | 200 |
| 44 | 1.7.4.2 | Submódulo Perfiles |  | 4d | 2009-04-08 A | 2009-04-09 A | 43 | 100% |  | Analista 1 [50%] | 8h | 8h | 200 | 200 |
| 45 | 1.7.4.3 | Gestión de Seguridad - Integración |  | 4d | 2009-04-10 A | 2009-04-13 A | 44 | 100% |  | Analista 1 [50%] | 8h | 8h | 200 | 200 |
| 46 | 1.7.5 | Mod.Testing - Personal Técnico |  | 4d | 2009-04-02 A | 2009-04-03 A |  | 100% |  | Analista 4 [50%] | 8h | 8h | 200 | 200 |
| 47 | 1.7.6 | Mod.Testing - Gestión Tickets |  | 12d | 2009-04-06 A | 2009-04-13 A | 40 | 100% |  | Analista 2 [50%] | 24h | 24h | 600 | 600 |
| 48 | 1.7.7 | Mod.Testing - Alertas |  | 4d | 2009-04-06 A | 2009-04-07 A | 46 | 100% |  | Analista 4 [50%] | 8h | 8h | 200 | 200 |
| 49 | 1.7.8 | Mod.Testing - Insumos |  | 4d | 2009-04-02 A | 2009-04-03 A |  | 100% |  | Analista 3 [50%] | 8h | 8h | 200 | 200 |
| 50 | 1.7.9 | Mod.Testing - Reportes |  | 4d | 2009-04-06 A | 2009-04-07 A | 41 | 100% |  | Analista 3 [50%] | 8h | 8h | 200 | 200 |
| 51 | 1.7.10 | Mod.Testing - Integración Documentación |  | 2d | 2009-04-14 A | 2009-04-14 A | 47 | 100% |  | Lider Proyecto [50%] | 4h | 4h | 200 | 200 |
| 52 | 1.7.11 | Mod.Testing - Entrega | milestone | 0d | 2009-04-14 A | 2009-04-14 A | 51 | 100% |  | Lider Proyecto |  |  |  |  |

| ID | WBS | Task | Duration | Start | Finish | Predecessors | Complete | Resources | Work | Actual work | Cost | Actual cost |
| --- | --- | --- | --- | --- | --- | --- | --- | --- | --- | --- | --- | --- |
| 53 | 1.8 | **Desarrollo** | 192d | 2009-04-02 A | 2009-08-13 A | 37 | 100% |  | 965.33h | 965.33h | 24,133.33 | 24,133.33 |
| 54 | 1.8.1 | **Construcción Base de Datos** | 35d | 2009-04-02 A | 2009-04-27 A |  | 100% |  | 69.33h | 69.33h | 1,733.33 | 1,733.33 |
| 55 | 1.8.1.1 | Generación Tablas | 12d | 2009-04-02 A | 2009-04-09 A |  | 100% | Desarrollador 1 [50%]; Desarrollador 2 [50%] | 37.33h | 37.33h | 933.33 | 933.33 |
| 56 | 1.8.1.2 | Poblado y Resguardo | 16d | 2009-04-10 A | 2009-04-27 A | 55 | 100% | Desarrollador 1 [50%]; Desarrollador 2 [50%] | 32h | 32h | 800 | 800 |
| 57 | 1.8.2 | **Módulo Clientes** | 20d | 2009-04-16 A | 2009-04-29 A |  | 100% |  | 80h | 80h | 2,000 | 2,000 |
| 58 | 1.8.2.1 | Clientes - Alta | 4d | 2009-04-16 A | 2009-04-17 A | 56 | 100% | Desarrollador 1 [50%]; Desarrollador 2 [50%] | 16h | 16h | 400 | 400 |
| 59 | 1.8.2.2 | Clientes - Baja | 4d | 2009-04-20 A | 2009-04-21 A | 58 | 100% | Desarrollador 1 [50%]; Desarrollador 2 [50%] | 16h | 16h | 400 | 400 |
| 60 | 1.8.2.3 | Clientes - Modificación | 4d | 2009-04-22 A | 2009-04-23 A | 59 | 100% | Desarrollador 1 [50%]; Desarrollador 2 [50%] | 16h | 16h | 400 | 400 |
| 61 | 1.8.2.4 | Clientes - Consulta | 4d | 2009-04-24 A | 2009-04-27 A | 60 | 100% | Desarrollador 1 [50%]; Desarrollador 2 [50%] | 16h | 16h | 400 | 400 |
| 62 | 1.8.2.5 | Clientes - Prueba Unitaria | 4d | 2009-04-28 A | 2009-04-29 A | 61, 39 | 100% | Tester 1 [50%]; Tester 2 [50%] | 16h | 16h | 400 | 400 |
| 63 | 1.8.3 | **Módulo Proveedores** | 20d | 2009-04-28 A | 2009-05-11 A |  | 100% |  | 80h | 80h | 2,000 | 2,000 |
| 64 | 1.8.3.1 | Proveedores - Alta | 4d | 2009-04-28 A | 2009-04-29 A | 61 | 100% | Desarrollador 1 [50%]; Desarrollador 2 [50%] | 16h | 16h | 400 | 400 |
| 65 | 1.8.3.2 | Proveedores - Baja | 4d | 2009-04-30 A | 2009-05-01 A | 64 | 100% | Desarrollador 1 [50%]; Desarrollador 2 [50%] | 16h | 16h | 400 | 400 |
| 66 | 1.8.3.3 | Proveedores - Modificación | 4d | 2009-05-04 A | 2009-05-05 A | 65 | 100% | Desarrollador 1 [50%]; Desarrollador 2 [50%] | 16h | 16h | 400 | 400 |
| 67 | 1.8.3.4 | Proveedores - Consulta | 4d | 2009-05-06 A | 2009-05-07 A | 66 | 100% | Desarrollador 1 [50%]; Desarrollador 2 [50%] | 16h | 16h | 400 | 400 |
| 68 | 1.8.3.5 | Proveedores - Prueba Unitaria | 4d | 2009-05-08 A | 2009-05-11 A | 67, 40 | 100% | Tester 1 [50%]; Tester 2 [50%] | 16h | 16h | 400 | 400 |
| 69 | 1.8.4 | **Módulo Insumos** | 20d | 2009-05-08 A | 2009-05-21 A |  | 100% |  | 80h | 80h | 2,000 | 2,000 |
| 70 | 1.8.4.1 | Insumos - Alta | 4d | 2009-05-08 A | 2009-05-11 A | 67 | 100% | Desarrollador 1 [50%]; Desarrollador 2 [50%] | 16h | 16h | 400 | 400 |
| 71 | 1.8.4.2 | Insumos - Baja | 4d | 2009-05-12 A | 2009-05-13 A | 70 | 100% | Desarrollador 1 [50%]; Desarrollador 2 [50%] | 16h | 16h | 400 | 400 |
| 72 | 1.8.4.3 | Insumos - Modificación | 4d | 2009-05-14 A | 2009-05-15 A | 71 | 100% | Desarrollador 1 [50%]; Desarrollador 2 [50%] | 16h | 16h | 400 | 400 |
| 73 | 1.8.4.4 | Insumos - Consulta | 4d | 2009-05-18 A | 2009-05-19 A | 72 | 100% | Desarrollador 1 [50%]; Desarrollador 2 [50%] | 16h | 16h | 400 | 400 |
| 74 | 1.8.4.5 | Insumos - Prueba Unitaria | 4d | 2009-05-20 A | 2009-05-21 A | 73, 41 | 100% | Tester 1 [50%]; Tester 2 [50%] | 16h | 16h | 400 | 400 |
| 75 | 1.8.5 | **Módulo Seguridad** | 64d | 2009-05-20 A | 2009-07-02 A |  | 100% |  | 288h | 288h | 7,200 | 7,200 |
| 76 | 1.8.5.1 | **Submódulo Usuarios** | 20d | 2009-05-20 A | 2009-06-02 A |  | 100% |  | 80h | 80h | 2,000 | 2,000 |
| 77 | 1.8.5.1.1 | Usuarios - Alta | 4d | 2009-05-20 A | 2009-05-21 A | 73 | 100% | Desarrollador 1 [50%]; Desarrollador 2 [50%] | 16h | 16h | 400 | 400 |
| 78 | 1.8.5.1.2 | Usuarios - Baja | 4d | 2009-05-22 A | 2009-05-25 A | 77 | 100% | Desarrollador 1 [50%]; Desarrollador 2 [50%] | 16h | 16h | 400 | 400 |
| 79 | 1.8.5.1.3 | Usuarios - Modificación | 4d | 2009-05-26 A | 2009-05-27 A | 78 | 100% | Desarrollador 1 [50%]; Desarrollador 2 [50%] | 16h | 16h | 400 | 400 |
| 80 | 1.8.5.1.4 | Usuarios - Consulta | 4d | 2009-05-28 A | 2009-05-29 A | 79 | 100% | Desarrollador 1 [50%]; Desarrollador 2 [50%] | 16h | 16h | 400 | 400 |
| 81 | 1.8.5.1.5 | Usuarios - Prueba Unitaria | 4d | 2009-06-01 A | 2009-06-02 A | 80, 43 | 100% | Tester 1 [50%]; Tester 2 [50%] | 16h | 16h | 400 | 400 |

| ID | WBS | Task | Duration | Start | Finish | Predecessors | Complete | Resources | Work | Actual work | Cost | Actual cost |
| --- | --- | --- | --- | --- | --- | --- | --- | --- | --- | --- | --- | --- |
| 82 | 1.8.5.2 | **Submódulo Perfiles** | 20d | 2009-06-01 A | 2009-06-12 A |  | 100% |  | 80h | 80h | 2,000 | 2,000 |
| 83 | 1.8.5.2.1 | Perfiles - Alta | 4d | 2009-06-01 A | 2009-06-02 A | 80 | 100% | Desarrollador 1 [50%]; Desarrollador 2 [50%] | 16h | 16h | 400 | 400 |
| 84 | 1.8.5.2.2 | Perfiles - Baja | 4d | 2009-06-03 A | 2009-06-04 A | 83 | 100% | Desarrollador 1 [50%]; Desarrollador 2 [50%] | 16h | 16h | 400 | 400 |
| 85 | 1.8.5.2.3 | Perfiles - Modificación | 4d | 2009-06-05 A | 2009-06-08 A | 84 | 100% | Desarrollador 1 [50%]; Desarrollador 2 [50%] | 16h | 16h | 400 | 400 |
| 86 | 1.8.5.2.4 | Perfiles - Consulta | 4d | 2009-06-09 A | 2009-06-10 A | 85 | 100% | Desarrollador 1 [50%]; Desarrollador 2 [50%] | 16h | 16h | 400 | 400 |
| 87 | 1.8.5.2.5 | Perfiles - Prueba Unitaria | 4d | 2009-06-11 A | 2009-06-12 A | 86, 44 | 100% | Tester 1 [50%]; Tester 2 [50%] | 16h | 16h | 400 | 400 |
| 88 | 1.8.5.3 | **Submódulo Gestión de Seguridad** | 32d | 2009-06-11 A | 2009-07-02 A |  | 100% |  | 128h | 128h | 3,200 | 3,200 |
| 89 | 1.8.5.3.1 | Gestión Seguridad - Consulta | 8d | 2009-06-11 A | 2009-06-16 A | 86 | 100% | Desarrollador 1 [50%]; Desarrollador 2 [50%] | 32h | 32h | 800 | 800 |
| 90 | 1.8.5.3.2 | Gestión de Seguridad - Asignación a Perfiles | 12d | 2009-06-17 A | 2009-06-24 A | 89 | 100% | Desarrollador 1 [50%]; Desarrollador 2 [50%] | 48h | 48h | 1,200 | 1,200 |
| 91 | 1.8.5.3.3 | Gestión de Seguridad - Prueba de integración | 12d | 2009-06-25 A | 2009-07-02 A | 90, 45 | 100% | Tester 1 [50%]; Tester 2 [50%] | 48h | 48h | 1,200 | 1,200 |
| 92 | 1.8.6 | **Módulo Personal Técnico** | 20d | 2009-06-25 A | 2009-07-08 A |  | 100% |  | 80h | 80h | 2,000 | 2,000 |
| 93 | 1.8.6.1 | Personal Técnico - Alta | 4d | 2009-06-25 A | 2009-06-26 A | 90 | 100% | Desarrollador 1 [50%]; Desarrollador 2 [50%] | 16h | 16h | 400 | 400 |
| 94 | 1.8.6.2 | Personal Técnico - Baja | 4d | 2009-06-29 A | 2009-06-30 A | 93 | 100% | Desarrollador 1 [50%]; Desarrollador 2 [50%] | 16h | 16h | 400 | 400 |
| 95 | 1.8.6.3 | Personal Técnico - Modificación | 4d | 2009-07-01 A | 2009-07-02 A | 94 | 100% | Desarrollador 1 [50%]; Desarrollador 2 [50%] | 16h | 16h | 400 | 400 |
| 96 | 1.8.6.4 | Personal Técnico - Consulta | 4d | 2009-07-03 A | 2009-07-06 A | 95 | 100% | Desarrollador 1 [50%]; Desarrollador 2 [50%] | 16h | 16h | 400 | 400 |
| 97 | 1.8.6.5 | Personal Técnico - Prueba Unitaria | 4d | 2009-07-07 A | 2009-07-08 A | 96, 46 | 100% | Tester 1 [50%]; Tester 2 [50%] | 16h | 16h | 400 | 400 |
| 98 | 1.8.7 | **Módulo Gestión de Tickets** | 52d | 2009-07-07 A | 2009-08-11 A |  | 100% |  | 208h | 208h | 5,200 | 5,200 |
| 99 | 1.8.7.1 | **Alta** | 16d | 2009-07-07 A | 2009-07-16 A |  | 100% |  | 64h | 64h | 1,600 | 1,600 |
| 100 | 1.8.7.1.1 | Alta - Generación de Presupuesto | 8d | 2009-07-07 A | 2009-07-10 A | 96 | 100% | Desarrollador 1 [50%]; Desarrollador 2 [50%] | 32h | 32h | 800 | 800 |
| 101 | 1.8.7.1.2 | Alta - Asignación a Técnico | 4d | 2009-07-13 A | 2009-07-14 A | 100 | 100% | Desarrollador 1 [50%]; Desarrollador 2 [50%] | 16h | 16h | 400 | 400 |
| 102 | 1.8.7.1.3 | Alta - Asignación de Estados | 4d | 2009-07-15 A | 2009-07-16 A | 101 | 100% | Desarrollador 1 [50%]; Desarrollador 2 [50%] | 16h | 16h | 400 | 400 |
| 103 | 1.8.7.2 | **Modificación** | 16d | 2009-07-17 A | 2009-07-28 A |  | 100% |  | 64h | 64h | 1,600 | 1,600 |
| 104 | 1.8.7.2.1 | Modificación - Presupuesto | 8d | 2009-07-17 A | 2009-07-22 A | 102 | 100% | Desarrollador 1 [50%]; Desarrollador 2 [50%] | 32h | 32h | 800 | 800 |
| 105 | 1.8.7.2.2 | Modificación - Asignación a Técnico | 4d | 2009-07-23 A | 2009-07-24 A | 104 | 100% | Desarrollador 1 [50%]; Desarrollador 2 [50%] | 16h | 16h | 400 | 400 |
| 106 | 1.8.7.2.3 | Modificación - Estados | 4d | 2009-07-27 A | 2009-07-28 A | 105 | 100% | Desarrollador 1 [50%]; Desarrollador 2 [50%] | 16h | 16h | 400 | 400 |
| 107 | 1.8.7.3 | Gestión de Tickets - Consulta | 8d | 2009-07-29 A | 2009-08-03 A | 106 | 100% | Desarrollador 1 [50%]; Desarrollador 2 [50%] | 32h | 32h | 800 | 800 |
| 108 | 1.8.7.4 | Gestión de Tickets - Prueba Unitaria | 12d | 2009-08-04 A | 2009-08-11 A | 107, 47 | 100% | Tester 1 [50%]; Tester 2 [50%] | 48h | 48h | 1,200 | 1,200 |

| ID | WBS | Task | Type | Duration | Start | Finish | Predecessors | Complete | Total slack | Resources | Work | Actual work | Cost | Actual cost |
| --- | --- | --- | --- | --- | --- | --- | --- | --- | --- | --- | --- | --- | --- | --- |
| 109 | 1.8.8 | **Módulo Alertas** |  | 12d | 2009-08-04 A | 2009-08-11 A |  | 100% |  |  | 48h | 48h | 1,200 | 1,200 |
| 110 | 1.8.8.1 | Módulo Alertas - Configuración |  | 4d | 2009-08-04 A | 2009-08-05 A | 107 | 100% |  | Desarrollador 1 [50%]; Desarrollador 2 [50%] | 16h | 16h | 400 | 400 |
| 111 | 1.8.8.2 | Módulo Alertas - Proceso Batch |  | 4d | 2009-08-06 A | 2009-08-07 A | 110 | 100% |  | Desarrollador 1 [50%]; Desarrollador 2 [50%] | 16h | 16h | 400 | 400 |
| 112 | 1.8.8.3 | Módulo Alertas - Prueba Unitaria |  | 4d | 2009-08-10 A | 2009-08-11 A | 111, 48 | 100% |  | Tester 1 [50%]; Tester 2 [50%] | 16h | 16h | 400 | 400 |
| 113 | 1.8.9 | **Módulo Reportes** |  | 8d | 2009-08-10 A | 2009-08-13 A |  | 100% |  |  | 32h | 32h | 800 | 800 |
| 114 | 1.8.9.1 | Módulo Reportes - Desarrollo |  | 4d | 2009-08-10 A | 2009-08-11 A | 111 | 100% |  | Desarrollador 1 [50%]; Desarrollador 2 [50%] | 16h | 16h | 400 | 400 |
| 115 | 1.8.9.2 | Módulo Reportes - Prueba Unitaria |  | 4d | 2009-08-12 A | 2009-08-13 A | 114, 50 | 100% |  | Tester 1 [50%]; Tester 2 [50%] | 16h | 16h | 400 | 400 |
| 116 | 1.9 | Integración |  | 30d | 2009-08-12 A | 2009-09-01 A | 114 | 100% |  | Desarrollador 1 [50%]; Desarrollador 2 [50%] | 120h | 120h | 3,000 | 3,000 |
| 117 | 1.10 | Pruebas de Integración |  | 40d | 2009-09-02 A | 2009-09-29 A | 116 | 100% |  | Tester 1 [50%]; Tester 2 [50%] | 160h | 160h | 4,000 | 4,000 |
| 118 | 1.11 | **Armar producto** |  | 20d | 2009-09-30 A | 2009-10-13 A | 117 | 100% |  |  | 240h | 240h | 6,000 | 6,000 |
| 119 | 1.11.1 | Instalador |  | 20d | 2009-09-30 A | 2009-10-13 A |  | 100% |  | Desarrollador 1 [50%] | 40h | 40h | 1,000 | 1,000 |
| 120 | 1.11.2 | Manual de instalación |  | 20d | 2009-09-30 A | 2009-10-13 A |  | 100% |  | Desarrollador 2 [50%] | 40h | 40h | 1,000 | 1,000 |
| 121 | 1.11.3 | Packaging |  | 20d | 2009-09-30 A | 2009-10-13 A |  | 100% |  | Analista 1 [50%]; Analista 2 [50%] | 80h | 80h | 2,000 | 2,000 |
| 122 | 1.11.4 | Manual de usuario |  | 20d | 2009-09-30 A | 2009-10-13 A |  | 100% |  | Analista 3 [50%]; Analista 4 [50%] | 80h | 80h | 2,000 | 2,000 |
| 123 | 1.12 | Producto Terminado - Entregable | milestone | 0d | 2009-10-13 | 2009-10-13 | 118 |  | 0d |  |  |  |  |  |
| 124 | 1.13 | Capacitación |  | 5d | 2009-10-14 | 2009-10-16 | 123 |  | 0d | Lider Proyecto [50%]; Analista 1 [50%]; Analista 2 [50%]; Analista 3 [50%]; Analista 4 [50%] | 42h |  | 2,300 |  |
| 125 | 1.14 | Implementación |  | 20d | 2009-10-16 | 2009-10-30 | 124 |  | 0d | Analista 1 [50%]; Analista 2 [50%]; Analista 3 [50%]; Analista 4 [50%]; Lider Proyecto [50%] | 173.33h |  | 4,333.33 |  |
