# Mi Project

Schedule from MS Project, 2005-09-19 to 2006-04-01, 4 hours a day, costs in $, A marks actual dates.
b52.NET

## Calendars

- Standard: Mon-Sun 08:00-10:00, 21:00-23:00. Exceptions (off unless hours are given): 2005-10-13 08:00-10:00, 21:00-23:00, 2005-11-17 08:00-10:00, 21:00-23:00, 2005-12-15 08:00-10:00, 21:00-23:00, 2006-01-19 08:00-10:00, 21:00-23:00, 2006-02-16 08:00-10:00, 21:00-23:00, 2006-03-16 08:00-10:00, 21:00-23:00.

## Resources

| Resource | Rate |
| --- | --- |
| Analista | 20 |
| Documentador | 12.5 |
| Programador | 22 |
| Tester | 12.5 |
| Implementador | 17 |
| Migrador de Datos | 12.5 |
| Project Manager | 24 |
| Instructor | 12.5 |
| QA | 18.5 |

## Schedule

| ID | WBS | Task | Duration | Start | Finish | Complete | Remaining | Baseline start | Baseline finish | Baseline duration | Total slack | Constraint | Resources | Work | Actual work | Cost | Baseline cost | Actual cost |
| --- | --- | --- | --- | --- | --- | --- | --- | --- | --- | --- | --- | --- | --- | --- | --- | --- | --- | --- |
| 1 | 1 | **Proyecto de Sistemas** | 194.5d? | 2005-09-19 A | 2006-04-01 | 31% | 133.31d? | 2005-09-19 | 2006-04-01 | 194.5d? | 0d |  |  | 2641h | 831.16h | 49,108 | 49,108 | 16,157.52 |
| 2 | 1.1 | **Administración del Proyecto** | 186.25d | 2005-09-19 A | 2006-03-24 | 41% | 110.37d | 2005-09-19 | 2006-03-24 | 186.25d | 8.25d |  |  | 215h | 88h | 4,688.5 | 4,688.5 | 1,951 |
| 3 | 1.1.1 | **Reuniones de Avance** | 182.25d | 2005-09-22 A | 2006-03-23 | 29% | 130.18d | 2005-09-22 | 2006-03-23 | 182.25d | 9.25d |  |  | 14h | 4h | 336 | 336 | 96 |
| 4 | 1.1.1.1 | Reuniones de Avance 1 | 1h | 2005-09-22 A | 2005-09-22 A | 100% |  | 2005-09-22 | 2005-09-22 | 1h |  | start no earlier than 2005-09-22 | Project Manager | 1h | 1h | 24 | 24 | 24 |
| 5 | 1.1.1.2 | Reuniones de Avance 2 | 1h | 2005-10-06 A | 2005-10-06 A | 100% |  | 2005-10-06 | 2005-10-06 | 1h |  | start no earlier than 2005-10-06 | Project Manager | 1h | 1h | 24 | 24 | 24 |
| 6 | 1.1.1.3 | Reuniones de Avance 3 | 1h | 2005-10-20 A | 2005-10-20 A | 100% |  | 2005-10-20 | 2005-10-20 | 1h |  | start no earlier than 2005-10-20 | Project Manager | 1h | 1h | 24 | 24 | 24 |
| 7 | 1.1.1.4 | Reuniones de Avance 4 | 1h | 2005-11-03 A | 2005-11-03 A | 100% |  | 2005-11-03 | 2005-11-03 | 1h |  | start no earlier than 2005-11-03 | Project Manager | 1h | 1h | 24 | 24 | 24 |
| 8 | 1.1.1.5 | Reuniones de Avance 5 | 1h | 2005-11-17 | 2005-11-17 |  |  | 2005-11-17 | 2005-11-17 | 1h | 135.25d | start no earlier than 2005-11-17 | Project Manager | 1h |  | 24 | 24 |  |
| 9 | 1.1.1.6 | Reuniones de Avance 6 | 1h | 2005-12-01 | 2005-12-01 |  |  | 2005-12-01 | 2005-12-01 | 1h | 121.25d | start no earlier than 2005-12-01 | Project Manager | 1h |  | 24 | 24 |  |
| 10 | 1.1.1.7 | Reuniones de Avance 7 | 1h | 2005-12-15 | 2005-12-15 |  |  | 2005-12-15 | 2005-12-15 | 1h | 107.25d | start no earlier than 2005-12-15 | Project Manager | 1h |  | 24 | 24 |  |
| 11 | 1.1.1.8 | Reuniones de Avance 8 | 1h | 2005-12-29 | 2005-12-29 |  |  | 2005-12-29 | 2005-12-29 | 1h | 93.25d | start no earlier than 2005-12-29 | Project Manager | 1h |  | 24 | 24 |  |
| 12 | 1.1.1.9 | Reuniones de Avance 9 | 1h | 2006-01-12 | 2006-01-12 |  |  | 2006-01-12 | 2006-01-12 | 1h | 79.25d | start no earlier than 2006-01-12 | Project Manager | 1h |  | 24 | 24 |  |
| 13 | 1.1.1.10 | Reuniones de Avance 10 | 1h | 2006-01-26 | 2006-01-26 |  |  | 2006-01-26 | 2006-01-26 | 1h | 65.25d | start no earlier than 2006-01-26 | Project Manager | 1h |  | 24 | 24 |  |
| 14 | 1.1.1.11 | Reuniones de Avance 11 | 1h | 2006-02-09 | 2006-02-09 |  |  | 2006-02-09 | 2006-02-09 | 1h | 51.25d | start no earlier than 2006-02-09 | Project Manager | 1h |  | 24 | 24 |  |
| 15 | 1.1.1.12 | Reuniones de Avance 12 | 1h | 2006-02-23 | 2006-02-23 |  |  | 2006-02-23 | 2006-02-23 | 1h | 37.25d | start no earlier than 2006-02-23 | Project Manager | 1h |  | 24 | 24 |  |
| 16 | 1.1.1.13 | Reuniones de Avance 13 | 1h | 2006-03-09 | 2006-03-09 |  |  | 2006-03-09 | 2006-03-09 | 1h | 23.25d | start no earlier than 2006-03-09 | Project Manager | 1h |  | 24 | 24 |  |
| 17 | 1.1.1.14 | Reuniones de Avance 14 | 1h | 2006-03-23 | 2006-03-23 |  |  | 2006-03-23 | 2006-03-23 | 1h | 9.25d | start no earlier than 2006-03-23 | Project Manager | 1h |  | 24 | 24 |  |
| 18 | 1.1.2 | **Elaboración de Documentos de Informes de Avance** | 182.5d | 2005-09-21 A | 2006-03-22 | 36% | 117.32d | 2005-09-21 | 2006-03-22 | 182.5d | 10d |  |  | 28h | 10h | 350 | 350 | 125 |
| 19 | 1.1.2.1 | Elaboración de Documentos de Informes de Avance 1 | 2h | 2005-09-21 A | 2005-09-21 A | 100% |  | 2005-09-21 | 2005-09-21 | 2h |  | start no earlier than 2005-09-21 | Documentador | 2h | 2h | 25 | 25 | 25 |
| 20 | 1.1.2.2 | Elaboración de Documentos de Informes de Avance 2 | 2h | 2005-10-05 A | 2005-10-05 A | 100% |  | 2005-10-05 | 2005-10-05 | 2h |  | start no earlier than 2005-10-05 | Documentador | 2h | 2h | 25 | 25 | 25 |
| 21 | 1.1.2.3 | Elaboración de Documentos de Informes de Avance 3 | 2h | 2005-10-19 A | 2005-10-19 A | 100% |  | 2005-10-19 | 2005-10-19 | 2h |  | start no earlier than 2005-10-19 | Documentador | 2h | 2h | 25 | 25 | 25 |
| 22 | 1.1.2.4 | Elaboración de Documentos de Informes de Avance 4 | 2h | 2005-11-02 A | 2005-11-02 A | 100% |  | 2005-11-02 | 2005-11-02 | 2h |  | start no earlier than 2005-11-02 | Documentador | 2h | 2h | 25 | 25 | 25 |
| 23 | 1.1.2.5 | Elaboración de Documentos de Informes de Avance 5 | 2h | 2005-11-16 A | 2005-11-16 A | 100% |  | 2005-11-16 | 2005-11-16 | 2h |  | start no earlier than 2005-11-16 | Documentador | 2h | 2h | 25 | 25 | 25 |
| 24 | 1.1.2.6 | Elaboración de Documentos de Informes de Avance 6 | 2h | 2005-11-30 | 2005-11-30 |  |  | 2005-11-30 | 2005-11-30 | 2h | 122d | start no earlier than 2005-11-30 | Documentador | 2h |  | 25 | 25 |  |
| 25 | 1.1.2.7 | Elaboración de Documentos de Informes de Avance 7 | 2h | 2005-12-14 | 2005-12-14 |  |  | 2005-12-14 | 2005-12-14 | 2h | 108d | start no earlier than 2005-12-14 | Documentador | 2h |  | 25 | 25 |  |
| 26 | 1.1.2.8 | Elaboración de Documentos de Informes de Avance 8 | 2h | 2005-12-28 | 2005-12-28 |  |  | 2005-12-28 | 2005-12-28 | 2h | 94d | start no earlier than 2005-12-28 | Documentador | 2h |  | 25 | 25 |  |
| 27 | 1.1.2.9 | Elaboración de Documentos de Informes de Avance 9 | 2h | 2006-01-11 | 2006-01-11 |  |  | 2006-01-11 | 2006-01-11 | 2h | 80d | start no earlier than 2006-01-11 | Documentador | 2h |  | 25 | 25 |  |
| 28 | 1.1.2.10 | Elaboración de Documentos de Informes de Avance 10 | 2h | 2006-01-25 | 2006-01-25 |  |  | 2006-01-25 | 2006-01-25 | 2h | 66d | start no earlier than 2006-01-25 | Documentador | 2h |  | 25 | 25 |  |
| 29 | 1.1.2.11 | Elaboración de Documentos de Informes de Avance 11 | 2h | 2006-02-08 | 2006-02-08 |  |  | 2006-02-08 | 2006-02-08 | 2h | 52d | start no earlier than 2006-02-08 | Documentador | 2h |  | 25 | 25 |  |
| 30 | 1.1.2.12 | Elaboración de Documentos de Informes de Avance 12 | 2h | 2006-02-22 | 2006-02-22 |  |  | 2006-02-22 | 2006-02-22 | 2h | 38d | start no earlier than 2006-02-22 | Documentador | 2h |  | 25 | 25 |  |
| 31 | 1.1.2.13 | Elaboración de Documentos de Informes de Avance 13 | 2h | 2006-03-08 | 2006-03-08 |  |  | 2006-03-08 | 2006-03-08 | 2h | 24d | start no earlier than 2006-03-08 | Documentador | 2h |  | 25 | 25 |  |
| 32 | 1.1.2.14 | Elaboración de Documentos de Informes de Avance 14 | 2h | 2006-03-22 | 2006-03-22 |  |  | 2006-03-22 | 2006-03-22 | 2h | 10d | start no earlier than 2006-03-22 | Documentador | 2h |  | 25 | 25 |  |

| ID | WBS | Task | Duration | Start | Finish | Predecessors | Complete | Remaining | Baseline start | Baseline finish | Baseline duration | Total slack | Constraint | Resources | Work | Actual work | Cost | Baseline cost | Actual cost |
| --- | --- | --- | --- | --- | --- | --- | --- | --- | --- | --- | --- | --- | --- | --- | --- | --- | --- | --- | --- |
| 33 | 1.1.3 | **Elaboración de Minutas de Reunión** | 182.25d | 2005-09-23 A | 2006-03-24 |  | 29% | 130.18d | 2005-09-23 | 2006-03-24 | 182.25d | 8.25d |  |  | 13h | 4h | 162.5 | 162.5 | 50 |
| 34 | 1.1.3.1 | Elaboración de Minutas de Reunión 1 | 1h | 2005-09-23 A | 2005-09-23 A |  | 100% |  | 2005-09-23 | 2005-09-23 | 1h |  | start no earlier than 2005-09-23 | Documentador | 1h | 1h | 12.5 | 12.5 | 12.5 |
| 35 | 1.1.3.2 | Elaboración de Minutas de Reunión 2 | 1h | 2005-10-07 A | 2005-10-07 A |  | 100% |  | 2005-10-07 | 2005-10-07 | 1h |  | start no earlier than 2005-10-07 | Documentador | 1h | 1h | 12.5 | 12.5 | 12.5 |
| 36 | 1.1.3.3 | Elaboración de Minutas de Reunión 3 | 1h | 2005-10-21 A | 2005-10-21 A |  | 100% |  | 2005-10-21 | 2005-10-21 | 1h |  | start no earlier than 2005-10-21 | Documentador | 1h | 1h | 12.5 | 12.5 | 12.5 |
| 37 | 1.1.3.4 | Elaboración de Minutas de Reunión 4 | 1h | 2005-11-04 A | 2005-11-04 A |  | 100% |  | 2005-11-04 | 2005-11-04 | 1h |  | start no earlier than 2005-11-04 | Documentador | 1h | 1h | 12.5 | 12.5 | 12.5 |
| 38 | 1.1.3.5 | Elaboración de Minutas de Reunión 5 | 1h | 2005-11-18 | 2005-11-18 |  |  |  | 2005-11-18 | 2005-11-18 | 1h | 134.25d | start no earlier than 2005-11-18 | Documentador | 1h |  | 12.5 | 12.5 |  |
| 39 | 1.1.3.6 | Elaboración de Minutas de Reunión 6 | 1h | 2005-12-02 | 2005-12-02 |  |  |  | 2005-12-02 | 2005-12-02 | 1h | 120.25d | start no earlier than 2005-12-02 | Documentador | 1h |  | 12.5 | 12.5 |  |
| 40 | 1.1.3.7 | Elaboración de Minutas de Reunión 7 | 1h | 2005-12-16 | 2005-12-16 |  |  |  | 2005-12-16 | 2005-12-16 | 1h | 106.25d | start no earlier than 2005-12-16 | Documentador | 1h |  | 12.5 | 12.5 |  |
| 41 | 1.1.3.8 | Elaboración de Minutas de Reunión 8 | 1h | 2005-12-30 | 2005-12-30 |  |  |  | 2005-12-30 | 2005-12-30 | 1h | 92.25d | start no earlier than 2005-12-30 | Documentador | 1h |  | 12.5 | 12.5 |  |
| 42 | 1.1.3.9 | Elaboración de Minutas de Reunión 9 | 1h | 2006-01-13 | 2006-01-13 |  |  |  | 2006-01-13 | 2006-01-13 | 1h | 78.25d | start no earlier than 2006-01-13 | Documentador | 1h |  | 12.5 | 12.5 |  |
| 43 | 1.1.3.10 | Elaboración de Minutas de Reunión 10 | 1h | 2006-01-27 | 2006-01-27 |  |  |  | 2006-01-27 | 2006-01-27 | 1h | 64.25d | start no earlier than 2006-01-27 | Documentador | 1h |  | 12.5 | 12.5 |  |
| 44 | 1.1.3.11 | Elaboración de Minutas de Reunión 11 | 1h | 2006-02-10 | 2006-02-10 |  |  |  | 2006-02-10 | 2006-02-10 | 1h | 50.25d | start no earlier than 2006-02-10 | Documentador | 1h |  | 12.5 | 12.5 |  |
| 45 | 1.1.3.12 | Elaboración de Minutas de Reunión 12 | 1h | 2006-02-24 | 2006-02-24 |  |  |  | 2006-02-24 | 2006-02-24 | 1h | 36.25d | start no earlier than 2006-02-24 | Documentador | 1h |  | 12.5 | 12.5 |  |
| 46 | 1.1.3.13 | Elaboración de Minutas de Reunión 13 | 1h | 2006-03-10 | 2006-03-10 |  |  |  | 2006-03-10 | 2006-03-10 | 1h | 22.25d | start no earlier than 2006-03-10 | Documentador | 1h |  | 12.5 | 12.5 |  |
| 47 | 1.1.3.14 | Elaboración de Minutas de Reunión 14 | 1h | 2006-03-24 | 2006-03-24 |  |  |  | 2006-03-24 | 2006-03-24 | 1h | 8.25d | start no earlier than 2006-03-24 |  |  |  |  |  |  |
| 48 | 1.1.4 | Administración de Proyecto Módulo de Producción y Expedición | 10d | 2005-10-04 A | 2005-10-14 |  | 40% | 6d | 2005-10-04 | 2005-10-14 | 10d | 169d |  | Project Manager | 40h | 16h | 960 | 960 | 384 |
| 49 | 1.1.5 | Administración de Proyecto Módulo de Pedidos y Presupuestos | 15d | 2005-09-19 A | 2005-10-04 |  | 50% | 7.5d | 2005-09-19 | 2005-10-04 | 15d | 179.25d |  | Project Manager | 60h | 30h | 1,440 | 1,440 | 720 |
| 50 | 1.1.6 | Administración de Proyecto Módulo de Facturación | 10d | 2005-10-15 A | 2005-10-25 |  | 40% | 6d | 2005-10-15 | 2005-10-25 | 10d | 158.75d |  | Project Manager | 40h | 16h | 960 | 960 | 384 |
| 51 | 1.1.7 | Administración de Proyecto Módulo de Hoja de Ruta y Mod.de Infraestructura | 5d | 2005-10-25 A | 2005-10-30 |  | 40% | 3d | 2005-10-25 | 2005-10-30 | 5d | 153.75d |  | Project Manager | 20h | 8h | 480 | 480 | 192 |
| 52 | 1.2 | **Requerimientos** | 38.75d? | 2005-09-19 A | 2005-10-28 A |  | 100% |  | 2005-09-19 | 2005-10-28 | 38.75d? |  |  |  | 258h | 258h | 5,010 | 5,010 | 5,010 |
| 53 | 1.2.1 | **Elaboración del Modelo de Casos de uso del Módulo de Pedidos y Presupuestos** | 13d? | 2005-09-19 A | 2005-10-02 A |  | 100% |  | 2005-09-19 | 2005-10-02 | 13d? |  |  |  | 52h | 52h | 1,040 | 1,040 | 1,040 |
| 54 | 1.2.1.1 | Identificación de Actores y Casos de Uso | 2.5d? | 2005-09-19 A | 2005-09-21 A |  | 100% |  | 2005-09-19 | 2005-09-21 | 2.5d? |  |  | Analista | 10h | 10h | 200 | 200 | 200 |
| 55 | 1.2.1.2 | Identificación de Flujo de Sucesos | 4d? | 2005-09-22 A | 2005-09-25 A | 54 | 100% |  | 2005-09-22 | 2005-09-25 | 4d? |  |  | Analista | 16h | 16h | 320 | 320 | 320 |
| 56 | 1.2.1.3 | Redacción de Casos de Uso | 6.5d? | 2005-09-26 A | 2005-10-02 A | 55 | 100% |  | 2005-09-26 | 2005-10-02 | 6.5d? |  |  | Analista | 26h | 26h | 520 | 520 | 520 |

| ID | WBS | Task | Type | Duration | Start | Finish | Predecessors | Complete | Baseline start | Baseline finish | Baseline duration | Resources | Work | Actual work | Cost | Baseline cost | Actual cost |
| --- | --- | --- | --- | --- | --- | --- | --- | --- | --- | --- | --- | --- | --- | --- | --- | --- | --- |
| 57 | 1.2.2 | **Elaboración del Modelo de Casos de uso del Módulo de Producción y Expedición** |  | 18d? | 2005-09-19 A | 2005-10-07 A |  | 100% | 2005-09-19 | 2005-10-07 | 18d? |  | 72h | 72h | 1,440 | 1,440 | 1,440 |
| 58 | 1.2.2.1 | Identificación de Actores y Casos de Uso |  | 3.5d? | 2005-09-19 A | 2005-09-22 A |  | 100% | 2005-09-19 | 2005-09-22 | 3.5d? | Analista | 14h | 14h | 280 | 280 | 280 |
| 59 | 1.2.2.2 | Identificación de Flujo de Sucesos |  | 5.5d? | 2005-09-23 A | 2005-09-28 A | 58 | 100% | 2005-09-23 | 2005-09-28 | 5.5d? | Analista | 22h | 22h | 440 | 440 | 440 |
| 60 | 1.2.2.3 | Redacción de Casos de Uso |  | 9d? | 2005-09-28 A | 2005-10-07 A | 59 | 100% | 2005-09-28 | 2005-10-07 | 9d? | Analista | 36h | 36h | 720 | 720 | 720 |
| 61 | 1.2.3 | **Elaboración del Modelo de Casos de uso del Módulo de Facturación** |  | 13d? | 2005-09-19 A | 2005-10-02 A |  | 100% | 2005-09-19 | 2005-10-02 | 13d? |  | 52h | 52h | 1,040 | 1,040 | 1,040 |
| 62 | 1.2.3.1 | Identificación de Actores y Casos de Uso |  | 2.5d? | 2005-09-19 A | 2005-09-21 A |  | 100% | 2005-09-19 | 2005-09-21 | 2.5d? | Analista | 10h | 10h | 200 | 200 | 200 |
| 63 | 1.2.3.2 | Identificación de Flujo de Sucesos |  | 4d? | 2005-09-22 A | 2005-09-25 A | 62 | 100% | 2005-09-22 | 2005-09-25 | 4d? | Analista | 16h | 16h | 320 | 320 | 320 |
| 64 | 1.2.3.3 | Redacción de Casos de Uso |  | 6.5d? | 2005-09-26 A | 2005-10-02 A | 63 | 100% | 2005-09-26 | 2005-10-02 | 6.5d? | Analista | 26h | 26h | 520 | 520 | 520 |
| 65 | 1.2.4 | **Elaboración del Modelo de Casos de uso del Mod. HdeR y del Mod. Infraestructura** |  | 6.5d? | 2005-09-19 A | 2005-09-25 A |  | 100% | 2005-09-19 | 2005-09-25 | 6.5d? |  | 26h | 26h | 520 | 520 | 520 |
| 66 | 1.2.4.1 | Identificación de Actores y Casos de Uso |  | 1.5d? | 2005-09-19 A | 2005-09-20 A |  | 100% | 2005-09-19 | 2005-09-20 | 1.5d? | Analista | 6h | 6h | 120 | 120 | 120 |
| 67 | 1.2.4.2 | Identificación de Flujo de Sucesos |  | 2d? | 2005-09-21 A | 2005-09-22 A | 66 | 100% | 2005-09-21 | 2005-09-22 | 2d? | Analista | 8h | 8h | 160 | 160 | 160 |
| 68 | 1.2.4.3 | Redacción de Casos de Uso |  | 3d? | 2005-09-23 A | 2005-09-25 A | 67 | 100% | 2005-09-23 | 2005-09-25 | 3d? | Analista | 12h | 12h | 240 | 240 | 240 |
| 69 | 1.2.5 | Estructuración del Modelo de Casos de Uso |  | 5d? | 2005-10-13 A | 2005-10-18 A | 57, 61, 53, 65 | 100% | 2005-10-13 | 2005-10-18 | 5d? | Analista | 20h | 20h | 400 | 400 | 400 |
| 70 | 1.2.6 | Elaboración de Documento de Casos de Uso - Requerimientos |  | 4d? | 2005-10-18 A | 2005-10-23 A | 69 | 100% | 2005-10-18 | 2005-10-23 | 4d? | Documentador | 16h | 16h | 200 | 200 | 200 |
| 71 | 1.2.7 | Control de calidad Casos de uso |  | 5d? | 2005-10-23 A | 2005-10-28 A | 70, 69 | 100% | 2005-10-23 | 2005-10-28 | 5d? | QA | 20h | 20h | 370 | 370 | 370 |
| 72 | 1.2.8 | Cierre Formal de Etapa de Requerimientos | milestone | 0d | 2005-10-28 A | 2005-10-28 A | 71 | 100% | 2005-10-28 | 2005-10-28 | 0d |  |  |  |  |  |  |
| 73 | 1.3 | **Análisis** |  | 48.25d? | 2005-09-26 A | 2005-11-13 A |  | 100% | 2005-09-26 | 2005-11-13 | 48.25d? |  | 264h | 264h | 4,884 | 4,884 | 4,884 |
| 74 | 1.3.1 | **Análisis y Modelización del Módulo de Pedidos y Presupuestos** |  | 12d? | 2005-10-02 A | 2005-10-14 A | 53 | 100% | 2005-10-02 | 2005-10-14 | 12d? |  | 48h | 48h | 960 | 960 | 960 |
| 75 | 1.3.1.1 | Análisis de la Arquitectura |  | 2.5d? | 2005-10-02 A | 2005-10-04 A | 56 | 100% | 2005-10-02 | 2005-10-04 | 2.5d? | Analista | 10h | 10h | 200 | 200 | 200 |
| 76 | 1.3.1.2 | Análisis de Casos de Uso |  | 3.5d? | 2005-10-05 A | 2005-10-08 A | 75 | 100% | 2005-10-05 | 2005-10-08 | 3.5d? | Analista | 14h | 14h | 280 | 280 | 280 |
| 77 | 1.3.1.3 | Análisis de Clases |  | 6d? | 2005-10-08 A | 2005-10-14 A | 76 | 100% | 2005-10-08 | 2005-10-14 | 6d? | Analista | 24h | 24h | 480 | 480 | 480 |
| 78 | 1.3.2 | **Análisis y Modelización del Módulo de Producción y Expedición** |  | 18d? | 2005-10-07 A | 2005-10-25 A | 57 | 100% | 2005-10-07 | 2005-10-25 | 18d? |  | 72h | 72h | 1,440 | 1,440 | 1,440 |
| 79 | 1.3.2.1 | Análisis de la Arquitectura |  | 3.5d? | 2005-10-07 A | 2005-10-10 A | 60 | 100% | 2005-10-07 | 2005-10-10 | 3.5d? | Analista | 14h | 14h | 280 | 280 | 280 |
| 80 | 1.3.2.2 | Análisis de Casos de Uso |  | 5.5d? | 2005-10-11 A | 2005-10-16 A | 79 | 100% | 2005-10-11 | 2005-10-16 | 5.5d? | Analista | 22h | 22h | 440 | 440 | 440 |
| 81 | 1.3.2.3 | Análisis de Clases |  | 9d? | 2005-10-16 A | 2005-10-25 A | 80 | 100% | 2005-10-16 | 2005-10-25 | 9d? | Analista | 36h | 36h | 720 | 720 | 720 |

| ID | WBS | Task | Type | Duration | Start | Finish | Predecessors | Complete | Remaining | Baseline start | Baseline finish | Baseline duration | Total slack | Resources | Work | Actual work | Cost | Baseline cost | Actual cost |
| --- | --- | --- | --- | --- | --- | --- | --- | --- | --- | --- | --- | --- | --- | --- | --- | --- | --- | --- | --- |
| 82 | 1.3.3 | **Análisis y Modelización del Módulo de Facturación** |  | 6.75d? | 2005-10-02 A | 2005-10-09 A | 61 | 100% |  | 2005-10-02 | 2005-10-09 | 6.75d? |  |  | 48h | 48h | 960 | 960 | 960 |
| 83 | 1.3.3.1 | Análisis de la Arquitectura |  | 2.5d? | 2005-10-06 A | 2005-10-09 A |  | 100% |  | 2005-10-06 | 2005-10-09 | 2.5d? |  | Analista | 10h | 10h | 200 | 200 | 200 |
| 84 | 1.3.3.2 | Análisis de Casos de Uso |  | 3.5d? | 2005-10-02 A | 2005-10-05 A |  | 100% |  | 2005-10-02 | 2005-10-05 | 3.5d? |  | Analista | 14h | 14h | 280 | 280 | 280 |
| 85 | 1.3.3.3 | Análisis de Clases |  | 6d? | 2005-10-02 A | 2005-10-08 A |  | 100% |  | 2005-10-02 | 2005-10-08 | 6d? |  | Analista | 24h | 24h | 480 | 480 | 480 |
| 86 | 1.3.4 | **Análisis y Modelización del Módulo de Hoja de Ruta y Módulo de Infraestructura** |  | 6d? | 2005-09-26 A | 2005-10-01 A | 65 | 100% |  | 2005-09-26 | 2005-10-01 | 6d? |  |  | 24h | 24h | 480 | 480 | 480 |
| 87 | 1.3.4.1 | Análisis de la Arquitectura |  | 1.25d? | 2005-09-26 A | 2005-09-27 A |  | 100% |  | 2005-09-26 | 2005-09-27 | 1.25d? |  | Analista | 5h | 5h | 100 | 100 | 100 |
| 88 | 1.3.4.2 | Análisis de Casos de Uso |  | 1.75d? | 2005-09-27 A | 2005-09-28 A | 87 | 100% |  | 2005-09-27 | 2005-09-28 | 1.75d? |  | Analista | 7h | 7h | 140 | 140 | 140 |
| 89 | 1.3.4.3 | Análisis de Clases |  | 3d? | 2005-09-29 A | 2005-10-01 A | 88 | 100% |  | 2005-09-29 | 2005-10-01 | 3d? |  | Analista | 12h | 12h | 240 | 240 | 240 |
| 90 | 1.3.5 | Elaboración del Documento de Modelo de Análisis |  | 6d? | 2005-10-25 A | 2005-10-31 A | 74, 78, 82, 86 | 100% |  | 2005-10-25 | 2005-10-31 | 6d? |  | Documentador | 24h | 24h | 300 | 300 | 300 |
| 91 | 1.3.6 | Elaboración del Documento de Especificación de Requerimientos de Software |  | 6d? | 2005-10-31 A | 2005-11-07 A | 90 | 100% |  | 2005-10-31 | 2005-11-07 | 6d? |  | Documentador | 24h | 24h | 300 | 300 | 300 |
| 92 | 1.3.7 | Control de calidad Docs. Análisis |  | 6d? | 2005-11-07 A | 2005-11-13 A | 91, 90 | 100% |  | 2005-11-07 | 2005-11-13 | 6d? |  | QA | 24h | 24h | 444 | 444 | 444 |
| 93 | 1.3.8 | Cierre Formal de Etapa de Análisis | milestone | 0d | 2005-11-13 A | 2005-11-13 A | 92 | 100% |  | 2005-11-13 | 2005-11-13 | 0d |  |  |  |  |  |  |  |
| 94 | 1.4 | **Diseño** |  | 53.75d? | 2005-10-02 A | 2005-11-24 |  | 90% | 5.12d? | 2005-10-02 | 2005-11-24 | 53.75d? | 128.25d |  | 231h | 209h | 4,440 | 4,440 | 4,045 |
| 95 | 1.4.1 | **Diseño de Módulo de Pedidos y Presupuestos** |  | 11d? | 2005-10-14 A | 2005-10-25 A | 74 | 100% |  | 2005-10-14 | 2005-10-25 | 11d? |  |  | 44h | 44h | 880 | 880 | 880 |
| 96 | 1.4.1.1 | Identificación de Clases Participantes |  | 2d? | 2005-10-14 A | 2005-10-16 A |  | 100% |  | 2005-10-14 | 2005-10-16 | 2d? |  | Analista | 8h | 8h | 160 | 160 | 160 |
| 97 | 1.4.1.2 | Descripción de interacciones entre objetos de diseño |  | 2.5d? | 2005-10-16 A | 2005-10-18 A | 96 | 100% |  | 2005-10-16 | 2005-10-18 | 2.5d? |  | Analista | 10h | 10h | 200 | 200 | 200 |
| 98 | 1.4.1.3 | Identificación de subsistemas e interfaces participantes |  | 2d? | 2005-10-19 A | 2005-10-20 A | 97 | 100% |  | 2005-10-19 | 2005-10-20 | 2d? |  | Analista | 8h | 8h | 160 | 160 | 160 |
| 99 | 1.4.1.4 | Descripción de Interacción entre subsistemas |  | 2.5d? | 2005-10-21 A | 2005-10-23 A | 98 | 100% |  | 2005-10-21 | 2005-10-23 | 2.5d? |  | Analista | 10h | 10h | 200 | 200 | 200 |
| 100 | 1.4.1.5 | Captura de Requisitos de Implementación |  | 2d? | 2005-10-23 A | 2005-10-25 A | 99 | 100% |  | 2005-10-23 | 2005-10-25 | 2d? |  | Analista | 8h | 8h | 160 | 160 | 160 |
| 101 | 1.4.2 | **Diseño de Módulo de Producción y Expedición** |  | 17.5d? | 2005-10-25 A | 2005-11-11 A | 78 | 100% |  | 2005-10-25 | 2005-11-11 | 17.5d? |  |  | 70h | 70h | 1,400 | 1,400 | 1,400 |
| 102 | 1.4.2.1 | Identificación de Clases Participantes |  | 3.5d? | 2005-10-25 A | 2005-10-28 A |  | 100% |  | 2005-10-25 | 2005-10-28 | 3.5d? |  | Analista | 14h | 14h | 280 | 280 | 280 |
| 103 | 1.4.2.2 | Descripción de interacciones entre objetos de diseño |  | 3.5d? | 2005-10-29 A | 2005-11-01 A | 102 | 100% |  | 2005-10-29 | 2005-11-01 | 3.5d? |  | Analista | 14h | 14h | 280 | 280 | 280 |
| 104 | 1.4.2.3 | Identificación de subsistemas e interfaces participantes |  | 3.5d? | 2005-11-01 A | 2005-11-04 A | 103 | 100% |  | 2005-11-01 | 2005-11-04 | 3.5d? |  | Analista | 14h | 14h | 280 | 280 | 280 |
| 105 | 1.4.2.4 | Descripción de Interacción entre subsistemas |  | 3.5d? | 2005-11-05 A | 2005-11-08 A | 104 | 100% |  | 2005-11-05 | 2005-11-08 | 3.5d? |  | Analista | 14h | 14h | 280 | 280 | 280 |
| 106 | 1.4.2.5 | Captura de Requisitos de Implementación |  | 3.5d? | 2005-11-08 A | 2005-11-11 A | 105 | 100% |  | 2005-11-08 | 2005-11-11 | 3.5d? |  | Analista | 14h | 14h | 280 | 280 | 280 |

| ID | WBS | Task | Type | Duration | Start | Finish | Predecessors | Complete | Remaining | Baseline start | Baseline finish | Baseline duration | Total slack | Free slack | Resources | Work | Actual work | Cost | Baseline cost | Actual cost |
| --- | --- | --- | --- | --- | --- | --- | --- | --- | --- | --- | --- | --- | --- | --- | --- | --- | --- | --- | --- | --- |
| 107 | 1.4.3 | **Diseño de Módulo de Facturación** |  | 11d? | 2005-10-09 A | 2005-10-20 A | 82 | 100% |  | 2005-10-09 | 2005-10-20 | 11d? |  |  |  | 44h | 44h | 880 | 880 | 880 |
| 108 | 1.4.3.1 | Identificación de Clases Participantes |  | 2d? | 2005-10-09 A | 2005-10-11 A |  | 100% |  | 2005-10-09 | 2005-10-11 | 2d? |  |  | Analista | 8h | 8h | 160 | 160 | 160 |
| 109 | 1.4.3.2 | Descripción de interacciones entre objetos de diseño |  | 2.5d? | 2005-10-11 A | 2005-10-13 A | 108 | 100% |  | 2005-10-11 | 2005-10-13 | 2.5d? |  |  | Analista | 10h | 10h | 200 | 200 | 200 |
| 110 | 1.4.3.3 | Identificación de subsistemas e interfaces participantes |  | 2d? | 2005-10-13 A | 2005-10-15 A | 109 | 100% |  | 2005-10-13 | 2005-10-15 | 2d? |  |  | Analista | 8h | 8h | 160 | 160 | 160 |
| 111 | 1.4.3.4 | Descripción de Interacción entre subsistemas |  | 2.5d? | 2005-10-15 A | 2005-10-18 A | 110 | 100% |  | 2005-10-15 | 2005-10-18 | 2.5d? |  |  | Analista | 10h | 10h | 200 | 200 | 200 |
| 112 | 1.4.3.5 | Captura de Requisitos de Implementación |  | 2d? | 2005-10-18 A | 2005-10-20 A | 111 | 100% |  | 2005-10-18 | 2005-10-20 | 2d? |  |  | Analista | 8h | 8h | 160 | 160 | 160 |
| 113 | 1.4.4 | **Diseño de Módulo de Hoja de Ruta y Módulo de Infraestructura** |  | 11.5d? | 2005-10-02 A | 2005-10-13 A | 86 | 100% |  | 2005-10-02 | 2005-10-13 | 11.5d? |  |  |  | 25h | 25h | 500 | 500 | 500 |
| 114 | 1.4.4.1 | Identificación de Clases Participantes |  | 1.25d? | 2005-10-02 A | 2005-10-06 A |  | 100% |  | 2005-10-02 | 2005-10-06 | 1.25d? |  |  | Analista | 5h | 5h | 100 | 100 | 100 |
| 115 | 1.4.4.2 | Descripción de interacciones entre objetos de diseño |  | 1.25d? | 2005-10-08 A | 2005-10-09 A | 114 | 100% |  | 2005-10-08 | 2005-10-09 | 1.25d? |  |  | Analista | 5h | 5h | 100 | 100 | 100 |
| 116 | 1.4.4.3 | Identificación de subsistemas e interfaces participantes |  | 1.25d? | 2005-10-09 A | 2005-10-10 A | 115 | 100% |  | 2005-10-09 | 2005-10-10 | 1.25d? |  |  | Analista | 5h | 5h | 100 | 100 | 100 |
| 117 | 1.4.4.4 | Descripción de Interacción entre subsistemas |  | 1.25d? | 2005-10-11 A | 2005-10-12 A | 116 | 100% |  | 2005-10-11 | 2005-10-12 | 1.25d? |  |  | Analista | 5h | 5h | 100 | 100 | 100 |
| 118 | 1.4.4.5 | Captura de Requisitos de Implementación |  | 1.25d? | 2005-10-12 A | 2005-10-13 A | 117 | 100% |  | 2005-10-12 | 2005-10-13 | 1.25d? |  |  | Analista | 5h | 5h | 100 | 100 | 100 |
| 119 | 1.4.5 | Integración del Diseño de los Módulos |  | 2d? | 2005-11-12 A | 2005-11-13 A | 95, 101, 107, 118 | 100% |  | 2005-11-12 | 2005-11-13 | 2d? |  |  | Analista | 8h | 8h | 160 | 160 | 160 |
| 120 | 1.4.6 | Elaboración del documento de Modelo de Diseño |  | 5d? | 2005-11-14 A | 2005-11-19 | 119 | 90% | 0.5d? | 2005-11-14 | 2005-11-19 | 5d? | 106.25d | 0d | Documentador | 20h | 18h | 250 | 250 | 225 |
| 121 | 1.4.7 | Control de calidad Docs. Diseño |  | 5d? | 2005-11-19 | 2005-11-24 | 120 |  |  | 2005-11-19 | 2005-11-24 | 5d? | 128.25d | 0d | QA | 20h |  | 370 | 370 |  |
| 122 | 1.4.8 | Cierre Formal de Etapa de Diseño | milestone | 0d | 2005-11-24 | 2005-11-24 | 121 |  |  | 2005-11-24 | 2005-11-24 | 0d | 128.25d |  |  |  |  |  |  |  |
| 123 | 1.5 | **Desarrollo** |  | 125.75d? | 2005-10-13 A | 2006-02-16 |  | 1% | 124.38d? | 2005-10-13 | 2006-02-16 | 125.75d? | 44.75d |  |  | 1116h | 12.16h | 22,425 | 22,425 | 267.52 |
| 124 | 1.5.1 | **Desarrollo Módulo de Pedidos y Presupuestos** |  | 47.5d? | 2005-10-25 | 2005-12-11 | 95 |  |  | 2005-10-25 | 2005-12-11 | 47.5d? | 57.5d | 41.25d |  | 190h |  | 4,180 | 4,180 |  |
| 125 | 1.5.1.1 | Programacion de Clases de Interfaz |  | 9.5d? | 2005-10-25 | 2005-11-03 |  |  |  | 2005-10-25 | 2005-11-03 | 9.5d? | 57.5d | 0d | Programador | 38h |  | 836 | 836 |  |
| 126 | 1.5.1.2 | Programacion de clases de Entidad |  | 9.5d? | 2005-11-04 | 2005-11-13 | 125 |  |  | 2005-11-04 | 2005-11-13 | 9.5d? | 57.5d | 0d | Programador | 38h |  | 836 | 836 |  |
| 127 | 1.5.1.3 | Programacion de Clases de Control |  | 9.5d? | 2005-11-13 | 2005-11-22 | 126 |  |  | 2005-11-13 | 2005-11-22 | 9.5d? | 57.5d | 0d | Programador | 38h |  | 836 | 836 |  |
| 128 | 1.5.1.4 | Programacion de Interfaz Grafica |  | 9.5d? | 2005-11-23 | 2005-12-02 | 127 |  |  | 2005-11-23 | 2005-12-02 | 9.5d? | 57.5d | 0d | Programador | 38h |  | 836 | 836 |  |
| 129 | 1.5.1.5 | Integracion |  | 9.5d? | 2005-12-02 | 2005-12-11 | 128 |  |  | 2005-12-02 | 2005-12-11 | 9.5d? | 57.5d | 0d | Programador | 38h |  | 836 | 836 |  |
| 130 | 1.5.2 | Test de Unidad Módulo de Pedidos y Presupuestos |  | 10d? | 2005-12-12 | 2005-12-21 | 129 |  |  | 2005-12-12 | 2005-12-21 | 10d? | 57.5d | 0d | Tester | 40h |  | 500 | 500 |  |
| 131 | 1.5.3 | Control de calidad Desarrollo Módulo |  | 7.5d? | 2005-12-22 | 2005-12-29 | 130 |  |  | 2005-12-22 | 2005-12-29 | 7.5d? | 93.5d |  | QA | 30h |  | 555 | 555 |  |

| ID | WBS | Task | Type | Duration | Start | Finish | Predecessors | Complete | Remaining | Baseline start | Baseline finish | Baseline duration | Total slack | Free slack | Resources | Work | Actual work | Cost | Baseline cost | Actual cost |
| --- | --- | --- | --- | --- | --- | --- | --- | --- | --- | --- | --- | --- | --- | --- | --- | --- | --- | --- | --- | --- |
| 132 | 1.5.4 | **Desarrollo Módulo de Producción y Expedición** |  | 71.25d? | 2005-11-12 | 2006-01-22 | 101 |  |  | 2005-11-12 | 2006-01-22 | 71.25d? | 0d |  |  | 285h |  | 6,270 | 6,270 |  |
| 133 | 1.5.4.1 | Programacion de Clases de Interfaz |  | 14.25d? | 2005-11-12 | 2005-11-26 |  |  |  | 2005-11-12 | 2005-11-26 | 14.25d? | 0d |  | Programador | 57h |  | 1,254 | 1,254 |  |
| 134 | 1.5.4.2 | Programacion de clases de Entidad |  | 14.25d? | 2005-11-26 | 2005-12-10 | 133 |  |  | 2005-11-26 | 2005-12-10 | 14.25d? | 0d |  | Programador | 57h |  | 1,254 | 1,254 |  |
| 135 | 1.5.4.3 | Programacion de Clases de Control |  | 14.25d? | 2005-12-10 | 2005-12-24 | 134 |  |  | 2005-12-10 | 2005-12-24 | 14.25d? | 0d |  | Programador | 57h |  | 1,254 | 1,254 |  |
| 136 | 1.5.4.4 | Programacion de Interfaz Grafica |  | 14.25d? | 2005-12-24 | 2006-01-07 | 135 |  |  | 2005-12-24 | 2006-01-07 | 14.25d? | 0d |  | Programador | 57h |  | 1,254 | 1,254 |  |
| 137 | 1.5.4.5 | Integracion |  | 14.25d? | 2006-01-08 | 2006-01-22 | 136 |  |  | 2006-01-08 | 2006-01-22 | 14.25d? | 0d |  | Programador | 57h |  | 1,254 | 1,254 |  |
| 138 | 1.5.5 | Test de Unidad Módulo de Producción y Expedición |  | 15d? | 2006-01-22 | 2006-02-06 | 137 |  |  | 2006-01-22 | 2006-02-06 | 15d? | 0d |  | Tester | 60h |  | 750 | 750 |  |
| 139 | 1.5.6 | Control de calidad Desarrollo Módulo |  | 10d? | 2006-02-06 | 2006-02-16 | 138 |  |  | 2006-02-06 | 2006-02-16 | 10d? | 44.75d |  | QA | 40h |  | 740 | 740 |  |
| 140 | 1.5.7 | **Desarrollo Módulo de Facturación** |  | 47.5d? | 2005-10-20 | 2005-12-06 | 107 |  |  | 2005-10-20 | 2005-12-06 | 47.5d? | 62.75d | 46.5d |  | 190h |  | 4,180 | 4,180 |  |
| 141 | 1.5.7.1 | Programacion de Clases de Interfaz |  | 9.5d? | 2005-10-20 | 2005-10-29 |  |  |  | 2005-10-20 | 2005-10-29 | 9.5d? | 62.75d | 0d | Programador | 38h |  | 836 | 836 |  |
| 142 | 1.5.7.2 | Programacion de clases de Entidad |  | 9.5d? | 2005-10-29 | 2005-11-08 | 141 |  |  | 2005-10-29 | 2005-11-08 | 9.5d? | 62.75d | 0d | Programador | 38h |  | 836 | 836 |  |
| 143 | 1.5.7.3 | Programacion de Clases de Control |  | 9.5d? | 2005-11-08 | 2005-11-17 | 142 |  |  | 2005-11-08 | 2005-11-17 | 9.5d? | 62.75d | 0d | Programador | 38h |  | 836 | 836 |  |
| 144 | 1.5.7.4 | Programacion de Interfaz Grafica |  | 9.5d? | 2005-11-17 | 2005-11-27 | 143 |  |  | 2005-11-17 | 2005-11-27 | 9.5d? | 62.75d | 0d | Programador | 38h |  | 836 | 836 |  |
| 145 | 1.5.7.5 | Integracion |  | 9.5d? | 2005-11-27 | 2005-12-06 | 144 |  |  | 2005-11-27 | 2005-12-06 | 9.5d? | 62.75d | 0d | Programador | 38h |  | 836 | 836 |  |
| 146 | 1.5.8 | Test de Unidad Módulo de Facturación |  | 10d? | 2005-12-06 | 2005-12-16 | 145 |  |  | 2005-12-06 | 2005-12-16 | 10d? | 62.75d | 0d | Tester | 40h |  | 500 | 500 |  |
| 147 | 1.5.9 | Control de calidad Desarrollo Módulo |  | 7.5d? | 2005-12-16 | 2005-12-31 | 146 |  |  | 2005-12-16 | 2005-12-31 | 7.5d? | 91.25d |  | QA | 30h |  | 555 | 555 |  |
| 148 | 1.5.10 | **Desarrollo Módulo de Hoja de Ruta y Módulo de Infraestructura** |  | 23.75d? | 2005-10-13 A | 2005-11-06 | 113 | 13% | 20.71d? | 2005-10-13 | 2005-11-06 | 23.75d? | 109.5d | 77d |  | 95h | 12.16h | 2,090 | 2,090 | 267.52 |
| 149 | 1.5.10.1 | Programacion de Clases de Interfaz |  | 4.75d? | 2005-10-13 A | 2005-10-18 |  | 15% | 4.04d? | 2005-10-13 | 2005-10-18 | 4.75d? | 110.21d | 0d | Programador | 19h | 2.85h | 418 | 418 | 62.7 |
| 150 | 1.5.10.2 | Programacion de clases de Entidad |  | 4.75d? | 2005-10-18 A | 2005-10-22 | 149 | 15% | 4.04d? | 2005-10-18 | 2005-10-22 | 4.75d? | 109.5d | 0d | Programador | 19h | 2.85h | 418 | 418 | 62.7 |
| 151 | 1.5.10.3 | Programacion de Clases de Control |  | 4.75d? | 2005-10-23 A | 2005-10-27 | 150 | 32% | 3.23d? | 2005-10-23 | 2005-10-27 | 4.75d? | 109.59d | 0d | Programador | 19h | 6.08h | 418 | 418 | 133.76 |
| 152 | 1.5.10.4 | Programacion de Interfaz Grafica |  | 4.75d? | 2005-10-27 A | 2005-11-01 | 151 | 2% | 4.66d? | 2005-10-27 | 2005-11-01 | 4.75d? | 109.5d | 0d | Programador | 19h | 0.38h | 418 | 418 | 8.36 |
| 153 | 1.5.10.5 | Integracion |  | 4.75d? | 2005-11-01 | 2005-11-06 | 152 |  |  | 2005-11-01 | 2005-11-06 | 4.75d? | 109.5d | 0d | Programador | 19h |  | 418 | 418 |  |
| 154 | 1.5.11 | Test de Unidad Módulo de Hoja de Ruta |  | 5d? | 2005-11-06 | 2005-11-11 | 153 |  |  | 2005-11-06 | 2005-11-11 | 5d? | 109.5d | 0d | Tester | 20h |  | 250 | 250 |  |
| 155 | 1.5.12 | Control de calidad Desarrollo Módulo |  | 7.5d? | 2005-11-13 | 2005-11-28 | 154 |  |  | 2005-11-13 | 2005-11-28 | 7.5d? | 124.75d |  | QA | 30h |  | 555 | 555 |  |
| 156 | 1.5.13 | Integración de los Módulos |  | 12.5d? | 2006-01-22 | 2006-02-03 | 124, 132, 140, 148 |  |  | 2006-01-22 | 2006-02-03 | 12.5d? | 52.5d | 0d | Programador | 50h |  | 1,100 | 1,100 |  |
| 157 | 1.5.14 | Elaboración del Documento de Clases y Paquetes |  | 4d? | 2006-02-04 | 2006-02-08 | 156 |  |  | 2006-02-04 | 2006-02-08 | 4d? | 52.5d | 0d | Documentador | 16h |  | 200 | 200 |  |
| 158 | 1.5.15 | Cierre Formal Fase de Desarrollo | milestone | 0d | 2006-02-08 | 2006-02-08 | 157 |  |  | 2006-02-08 | 2006-02-08 | 0d | 52.5d |  |  |  |  |  |  |  |

| ID | WBS | Task | Type | Duration | Start | Finish | Predecessors | Baseline start | Baseline finish | Baseline duration | Total slack | Free slack | Resources | Work | Cost | Baseline cost |
| --- | --- | --- | --- | --- | --- | --- | --- | --- | --- | --- | --- | --- | --- | --- | --- | --- |
| 159 | 1.6 | **Testing y Documentacion** |  | 128.25d? | 2005-11-11 | 2006-03-19 |  | 2005-11-11 | 2006-03-19 | 128.25d? | 0d |  |  | 464h | 6,160 | 6,160 |
| 160 | 1.6.1 | Elaboración del Plan de Pruebas |  | 6d? | 2005-11-19 | 2005-11-25 | 120 | 2005-11-19 | 2005-11-25 | 6d? | 106.25d |  | Analista | 24h | 480 | 480 |
| 161 | 1.6.2 | **Procedimiento de Pruebas del Módulo de Pedidos y Presupuestos** |  | 22.5d? | 2005-12-22 | 2006-01-13 | 130 | 2005-12-22 | 2006-01-13 | 22.5d? | 57.5d |  |  | 90h | 1,125 | 1,125 |
| 162 | 1.6.2.1 | Armado de Casos de Prueba |  | 7.5d? | 2005-12-22 | 2005-12-29 |  | 2005-12-22 | 2005-12-29 | 7.5d? | 57.5d | 0d | Tester | 30h | 375 | 375 |
| 163 | 1.6.2.2 | Ejecucion de Casos de Prueba |  | 7.5d? | 2005-12-29 | 2006-01-05 | 162 | 2005-12-29 | 2006-01-05 | 7.5d? | 57.5d | 0d | Tester | 30h | 375 | 375 |
| 164 | 1.6.2.3 | Documentación |  | 7.5d? | 2006-01-06 | 2006-01-13 | 163 | 2006-01-06 | 2006-01-13 | 7.5d? | 57.5d |  | Tester | 30h | 375 | 375 |
| 165 | 1.6.3 | **Procedimiento de Pruebas del Módulo de Producción y Expedición** |  | 33.75d? | 2006-02-06 | 2006-03-11 | 138 | 2006-02-06 | 2006-03-11 | 33.75d? | 0d |  |  | 135h | 1,687.5 | 1,687.5 |
| 166 | 1.6.3.1 | Armado de Casos de Prueba |  | 11.25d? | 2006-02-06 | 2006-02-17 |  | 2006-02-06 | 2006-02-17 | 11.25d? | 0d |  | Tester | 45h | 562.5 | 562.5 |
| 167 | 1.6.3.2 | Ejecucion de Casos de Prueba |  | 11.25d? | 2006-02-17 | 2006-02-28 | 166 | 2006-02-17 | 2006-02-28 | 11.25d? | 0d |  | Tester | 45h | 562.5 | 562.5 |
| 168 | 1.6.3.3 | Documentación |  | 11.25d? | 2006-02-28 | 2006-03-11 | 167 | 2006-02-28 | 2006-03-11 | 11.25d? | 0d |  | Tester | 45h | 562.5 | 562.5 |
| 169 | 1.6.4 | **Procedimiento de Pruebas del Módulo de Facturación** |  | 22.5d? | 2005-12-16 | 2006-01-08 | 146 | 2005-12-16 | 2006-01-08 | 22.5d? | 62.75d |  |  | 90h | 1,125 | 1,125 |
| 170 | 1.6.4.1 | Armado de Casos de Prueba |  | 7.5d? | 2005-12-16 | 2005-12-24 |  | 2005-12-16 | 2005-12-24 | 7.5d? | 62.75d | 0d | Tester | 30h | 375 | 375 |
| 171 | 1.6.4.2 | Ejecucion de Casos de Prueba |  | 7.5d? | 2005-12-24 | 2005-12-31 | 170 | 2005-12-24 | 2005-12-31 | 7.5d? | 62.75d | 0d | Tester | 30h | 375 | 375 |
| 172 | 1.6.4.3 | Documentación |  | 7.5d? | 2005-12-31 | 2006-01-08 | 171 | 2005-12-31 | 2006-01-08 | 7.5d? | 62.75d |  | Tester | 30h | 375 | 375 |
| 173 | 1.6.5 | **Procedimiento de Pruebas del Mod. de Hoja de Ruta y Mod. de Infraestructura** |  | 11.25d? | 2005-11-11 | 2005-11-22 | 154 | 2005-11-11 | 2005-11-22 | 11.25d? | 109.5d |  |  | 45h | 562.5 | 562.5 |
| 174 | 1.6.5.1 | Armado de Casos de Prueba |  | 3.75d? | 2005-11-11 | 2005-11-14 |  | 2005-11-11 | 2005-11-14 | 3.75d? | 109.5d | 0d | Tester | 15h | 187.5 | 187.5 |
| 175 | 1.6.5.2 | Ejecucion de Casos de Prueba |  | 3.75d? | 2005-11-15 | 2005-11-18 | 174 | 2005-11-15 | 2005-11-18 | 3.75d? | 109.5d | 0d | Tester | 15h | 187.5 | 187.5 |
| 176 | 1.6.5.3 | Documentación |  | 3.75d? | 2005-11-18 | 2005-11-22 | 175 | 2005-11-18 | 2005-11-22 | 3.75d? | 109.5d |  | Tester | 15h | 187.5 | 187.5 |
| 177 | 1.6.6 | Elaboración de Manual del Usuario |  | 12.5d? | 2006-01-22 | 2006-02-04 | 124, 132, 140, 148 | 2006-01-22 | 2006-02-04 | 12.5d? | 35.5d |  | Documentador | 50h | 625 | 625 |
| 178 | 1.6.7 | Control de calidad testing |  | 7.5d? | 2006-03-12 | 2006-03-19 | 160, 161, 165, 169, 173, 177 | 2006-03-12 | 2006-03-19 | 7.5d? | 0d |  | QA | 30h | 555 | 555 |
| 179 | 1.6.8 | Cierre Formal Fase de Testing y Documentación | milestone | 0d | 2006-03-19 | 2006-03-19 | 178 | 2006-03-19 | 2006-03-19 | 0d | 0d |  |  |  |  |  |
| 180 | 1.7 | **Implementación** |  | 13.5d? | 2006-03-19 | 2006-04-01 |  | 2006-03-19 | 2006-04-01 | 13.5d? | 0d |  |  | 93h | 1,500.5 | 1,500.5 |
| 181 | 1.7.1 | Preparación del ambiente de Implementación |  | 4.5d? | 2006-03-19 | 2006-03-23 | 179 | 2006-03-19 | 2006-03-23 | 4.5d? | 0d |  | Implementador | 18h | 306 | 306 |
| 182 | 1.7.2 | Implementación de servicios de base |  | 2.5d? | 2006-03-24 | 2006-03-26 | 181 | 2006-03-24 | 2006-03-26 | 2.5d? | 0d |  | Implementador | 10h | 170 | 170 |
| 183 | 1.7.3 | Implementación del sistema |  | 2d? | 2006-03-26 | 2006-03-28 | 182 | 2006-03-26 | 2006-03-28 | 2d? | 0d |  | Implementador | 8h | 136 | 136 |
| 184 | 1.7.4 | Creación de Datos y Perfiles de Usuario Iniciales |  | 1d? | 2006-03-28 | 2006-03-29 | 183 | 2006-03-28 | 2006-03-29 | 1d? | 0d |  | Implementador | 4h | 68 | 68 |
| 185 | 1.7.5 | Migracion de Datos |  | 5d? | 2006-03-19 | 2006-03-24 | 179 | 2006-03-19 | 2006-03-24 | 5d? | 3.75d | 0d | Migrador de Datos | 20h | 250 | 250 |
| 186 | 1.7.6 | Configuración y Adaptación del Sistema |  | 2d? | 2006-03-29 | 2006-03-31 | 184 | 2006-03-29 | 2006-03-31 | 2d? | 0d |  | Implementador | 8h | 136 | 136 |
| 187 | 1.7.7 | Revisión del Sistema con el Usuario Final |  | 2d? | 2006-03-24 | 2006-03-26 | 185 | 2006-03-24 | 2006-03-26 | 2d? | 3.75d | 0d | Project Manager | 8h | 192 | 192 |
| 188 | 1.7.8 | Capacitación Técnica / Operativa |  | 1.5d? | 2006-03-31 | 2006-04-01 | 186 | 2006-03-31 | 2006-04-01 | 1.5d? | 0d |  | Instructor | 6h | 75 | 75 |
| 189 | 1.7.9 | Capacitación Funcional a Usuarios Finales |  | 1.5d? | 2006-03-26 | 2006-03-27 | 187 | 2006-03-26 | 2006-03-27 | 1.5d? | 3.75d | 0d | Instructor | 6h | 75 | 75 |
| 190 | 1.7.10 | Control de calidad Implementación |  | 1.25d? | 2006-03-28 | 2006-03-29 | 189 | 2006-03-28 | 2006-03-29 | 1.25d? | 3.75d | 0d | QA | 5h | 92.5 | 92.5 |
| 191 | 1.7.11 | Cierre Formal Etapa de Implementación | milestone | 0d | 2006-03-29 | 2006-03-29 | 190 | 2006-03-29 | 2006-03-29 | 0d | 3.75d |  |  |  |  |  |
