# v1.3

Schedule from MS Project, 2008-09-01 to 2009-05-06, 4 hours a day, costs in $.
F.G.E.

## Calendars

- Estándar: Mon-Fri 09:00-13:00, 15:00-19:00; Sat-Sun off. Exceptions (off unless hours are given): 2008-09-09 09:00-13:00.

## Resources

| Resource | Rate |
| --- | --- |
| Analista 1 | 50 |
| Analista 2 | 50 |
| Lider Proyecto | 75 |
| Desarrollador 1 | 50 |
| Desarrollador 2 | 50 |
| Analista 3 | 50 |
| Analista 4 | 50 |
| Tester 1 | 25 |
| Tester 2 | 25 |

## Schedule

| ID | WBS | Task | Type | Duration | Start | Finish | Predecessors | Total slack | Free slack | Constraint | Resources | Work | Cost |
| --- | --- | --- | --- | --- | --- | --- | --- | --- | --- | --- | --- | --- | --- |
| 1 | 1 | **Cronograma Proyeto SETI** |  | 354.33d | 2008-09-01 | 2009-05-06 |  | 0d |  |  |  | 1640h | 81,800 |
| 2 | 1.1 | **Relevamiento** |  | 19d | 2008-09-01 | 2008-09-12 |  | 0d |  |  |  | 56h | 3,000 |
| 3 | 1.1.1 | Relevamiento - Entrevistas |  | 2d | 2008-09-01 | 2008-09-01 |  | 0d |  | start no earlier than 2008-09-01 | Analista 1 | 8h | 400 |
| 4 | 1.1.2 | **Documentación Inicial** |  | 17d | 2008-09-02 | 2008-09-12 |  | 0d |  |  |  | 48h | 2,600 |
| 5 | 1.1.2.1 | Documentación Inicial - Desarrollo |  | 16d | 2008-09-02 | 2008-09-11 | 3 | 0d |  |  | Analista 1 [25%]; Analista 2 [25%]; Analista 3 [25%]; Analista 4 [25%] | 40h | 2,000 |
| 6 | 1.1.2.2 | Documentación Inicial - Integración |  | 2d | 2008-09-12 | 2008-09-12 | 5 | 0d |  |  | Lider Proyecto | 8h | 600 |
| 7 | 1.1.2.3 | Documentacion Inicial - Entrega | milestone | 0d | 2008-09-12 | 2008-09-12 | 6 | 0d |  |  | Lider Proyecto |  |  |
| 8 | 1.2 | **Análisis** |  | 48d | 2008-09-15 | 2008-10-16 | 4 | 0d |  |  |  | 352h | 18,400 |
| 9 | 1.2.1 | **Casos de Uso de Negocio** |  | 16d | 2008-09-15 | 2008-09-24 |  | 0d |  |  |  | 96h | 4,800 |
| 10 | 1.2.1.1 | C.U.Negocio - Clientes |  | 2d | 2008-09-15 | 2008-09-15 |  | 18d | 0d |  | Analista 1 | 8h | 400 |
| 11 | 1.2.1.2 | C.U.Negocio - Proveedores |  | 2d | 2008-09-15 | 2008-09-15 |  | 0d |  |  | Analista 2 | 8h | 400 |
| 12 | 1.2.1.3 | C.U.Negocio - Insumos |  | 2d | 2008-09-15 | 2008-09-15 |  | 20d | 2d |  | Analista 3 | 8h | 400 |
| 13 | 1.2.1.4 | C.U.Negocio - Seguridad |  | 6d | 2008-09-16 | 2008-09-18 | 11 | 0d |  |  | Analista 3 | 24h | 1,200 |
| 14 | 1.2.1.5 | C.U.Negocio - Personal Técnico |  | 2d | 2008-09-16 | 2008-09-16 | 11 | 18d | 0d |  | Analista 4 | 8h | 400 |
| 15 | 1.2.1.6 | C.U.Negocio - Gestión Tickets |  | 8d | 2008-09-19 | 2008-09-24 | 13 | 0d |  |  | Analista 3 | 32h | 1,600 |
| 16 | 1.2.1.7 | C.U.Negocio - Alertas |  | 2d | 2008-09-19 | 2008-09-19 | 13 | 8d | 6d |  | Analista 4 | 8h | 400 |
| 17 | 1.2.2 | **Casos de Uso de Sistema** |  | 22d | 2008-09-16 | 2008-09-30 |  | 0d |  |  |  | 120h | 6,000 |
| 18 | 1.2.2.1 | C.U.Sistema - Clientes |  | 2d | 2008-09-16 | 2008-09-16 | 10 | 18d | 0d |  | Analista 1 | 8h | 400 |
| 19 | 1.2.2.2 | C.U.Sistema - Proveedores |  | 2d | 2008-09-16 | 2008-09-16 | 11 | 4d | 0d |  | Analista 2 | 8h | 400 |
| 20 | 1.2.2.3 | C.U.Sistema - Insumos |  | 2d | 2008-09-17 | 2008-09-17 | 12, 18 | 18d |  |  | Analista 1 | 8h | 400 |
| 21 | 1.2.2.4 | C.U.Sistema - Seguridad |  | 8d | 2008-09-19 | 2008-09-24 | 19, 13 | 0d |  |  | Analista 2 | 32h | 1,600 |
| 22 | 1.2.2.5 | C.U.Sistema - Personal Técnico |  | 2d | 2008-09-17 | 2008-09-17 | 19, 14 | 18d |  |  | Analista 4 | 8h | 400 |
| 23 | 1.2.2.6 | C.U.Sistema - Gestión Tickets |  | 8d | 2008-09-25 | 2008-09-30 | 21, 15 | 0d |  |  | Analista 1 | 32h | 1,600 |
| 24 | 1.2.2.7 | C.U.Sistema - Alertas |  | 6d | 2008-09-25 | 2008-09-29 | 21, 16 | 2d |  |  | Analista 4 | 24h | 1,200 |

Notes:
- 20: Dependencia de la 18 por Solapamiento de Recursos

| ID | WBS | Task | Type | Duration | Start | Finish | Predecessors | Total slack | Constraint | Resources | Work | Cost |
| --- | --- | --- | --- | --- | --- | --- | --- | --- | --- | --- | --- | --- |
| 25 | 1.2.3 | **Modelo de Análisis** |  | 4d | 2008-10-01 | 2008-10-02 | 17 | 0d |  |  | 16h | 1,200 |
| 26 | 1.2.3.1 | Modelo de Análisis - Integración Documentación |  | 4d | 2008-10-01 | 2008-10-02 |  | 0d |  | Lider Proyecto | 16h | 1,200 |
| 27 | 1.2.3.2 | Modelo de Análisis - Entrega | milestone | 0d | 2008-10-02 | 2008-10-02 | 26 | 0d |  | Lider Proyecto |  |  |
| 28 | 1.2.4 | **Modelo de Testing** |  | 20d | 2008-10-03 | 2008-10-16 | 25 | 0d |  |  | 120h | 6,400 |
| 29 | 1.2.4.1 | Mod.Testing - Clientes |  | 2d | 2008-10-03 | 2008-10-03 |  | 0d |  | Analista 1 | 8h | 400 |
| 30 | 1.2.4.2 | Mod.Testing - Proveedores |  | 2d | 2008-10-06 | 2008-10-06 | 29 | 0d |  | Analista 2 | 8h | 400 |
| 31 | 1.2.4.3 | Mod.Testing - Insumos |  | 2d | 2008-10-06 | 2008-10-06 | 29 | 16d |  | Analista 3 | 8h | 400 |
| 32 | 1.2.4.4 | Mod.Testing - Seguridad |  | 6d | 2008-10-07 | 2008-10-09 | 30 | 0d |  | Analista 1 | 24h | 1,200 |
| 33 | 1.2.4.5 | Mod.Testing - Personal Técnico |  | 2d | 2008-10-07 | 2008-10-07 | 30 | 14d |  | Analista 4 | 8h | 400 |
| 34 | 1.2.4.6 | Mod.Testing - Gestión Tickets |  | 6d | 2008-10-10 | 2008-10-14 | 32 | 4d |  | Analista 2 | 24h | 1,200 |
| 35 | 1.2.4.7 | Mod.Testing - Alertas |  | 6d | 2008-10-10 | 2008-10-14 | 32 | 0d |  | Analista 4 | 24h | 1,200 |
| 36 | 1.2.4.8 | Mod.Testing - Integración Documentación |  | 4d | 2008-10-15 | 2008-10-16 | 35 | 0d |  | Lider Proyecto | 16h | 1,200 |
| 37 | 1.2.4.9 | Mod.Testing - Entrega | milestone | 0d | 2008-10-16 | 2008-10-16 | 36 | 0d |  | Lider Proyecto |  |  |
| 38 | 1.3 | **Diseño** |  | 30d | 2008-10-17 | 2008-11-06 | 28 | 0d |  |  | 120h | 6,600 |
| 39 | 1.3.1 | Diseño - Diagrama de Clases |  | 6d | 2008-10-17 | 2008-10-21 |  | 0d |  | Analista 1 | 24h | 1,200 |
| 40 | 1.3.2 | Diseño - Diagrama de Interacción |  | 6d | 2008-10-22 | 2008-10-24 | 39 | 0d |  | Analista 2 | 24h | 1,200 |
| 41 | 1.3.3 | Diseño - Diagrama de Secuencia |  | 6d | 2008-10-27 | 2008-10-29 | 40 | 0d |  | Analista 3 | 24h | 1,200 |
| 42 | 1.3.4 | Diseño - Diagrama de Entidad Relación |  | 6d | 2008-10-30 | 2008-11-03 | 41 | 0d |  | Analista 4 | 24h | 1,200 |
| 43 | 1.3.5 | Diseño - Integración Documentación |  | 6d | 2008-11-04 | 2008-11-06 | 42 | 0d |  | Lider Proyecto | 24h | 1,800 |
| 44 | 1.3.6 | Diseño - Entrega | milestone | 0d | 2008-11-06 | 2008-11-06 | 43 | 0d | finish no earlier than 2008-10-02 | Lider Proyecto |  |  |
| 45 | 1.4 | Revisión de Entregas Realizadas |  | 30d | 2008-11-07 | 2008-11-27 | 2, 8, 38 | 0d |  | Lider Proyecto | 120h | 9,000 |
| 46 | 1.5 | Aprobación de la Cursada | milestone | 0d | 2008-11-27 | 2008-11-27 | 45 | 154d |  |  |  |  |
| 47 | 1.6 | **Desarrollo** |  | 191.33d | 2008-11-28 | 2009-04-10 | 45 | 0d |  |  | 752h | 34,200 |
| 48 | 1.6.1 | **Construcción Base de Datos** |  | 23.33d | 2008-11-28 | 2008-12-15 |  | 0d |  |  | 80h | 4,000 |
| 49 | 1.6.1.1 | Generación Tablas |  | 13.33d | 2008-11-28 | 2008-12-08 |  | 0d |  | Desarrollador 1 [50%]; Desarrollador 2 [50%] | 40h | 2,000 |
| 50 | 1.6.1.2 | Poblado y Resguardo |  | 10d | 2008-12-08 | 2008-12-15 | 49 | 0d |  | Desarrollador 2 [50%]; Desarrollador 1 [50%] | 40h | 2,000 |

| ID | WBS | Task | Duration | Start | Finish | Predecessors | Total slack | Resources | Work | Cost |
| --- | --- | --- | --- | --- | --- | --- | --- | --- | --- | --- |
| 51 | 1.6.2 | **Módulo Clientes** | 10d | 2008-12-15 | 2008-12-22 | 48 | 0d |  | 40h | 1,800 |
| 52 | 1.6.2.1 | Clientes - Alta | 2d | 2008-12-15 | 2008-12-16 |  | 0d | Desarrollador 1 [50%]; Desarrollador 2 [50%] | 8h | 400 |
| 53 | 1.6.2.2 | Clientes - Baja | 2d | 2008-12-16 | 2008-12-17 | 52 | 0d | Desarrollador 1 [50%]; Desarrollador 2 [50%] | 8h | 400 |
| 54 | 1.6.2.3 | Clientes - Modificación | 2d | 2008-12-17 | 2008-12-18 | 53 | 0d | Desarrollador 1 [50%]; Desarrollador 2 [50%] | 8h | 400 |
| 55 | 1.6.2.4 | Clientes - Consulta | 2d | 2008-12-18 | 2008-12-19 | 54 | 0d | Desarrollador 1 [50%]; Desarrollador 2 [50%] | 8h | 400 |
| 56 | 1.6.2.5 | Clientes - Prueba Unitaria | 2d | 2008-12-19 | 2008-12-22 | 55 | 0d | Tester 1 [50%]; Tester 2 [50%] | 8h | 200 |
| 57 | 1.6.3 | **Módulo Proveedores** | 10d | 2008-12-22 | 2008-12-29 | 51 | 0d |  | 40h | 1,800 |
| 58 | 1.6.3.1 | Proveedores - Alta | 2d | 2008-12-22 | 2008-12-23 |  | 0d | Desarrollador 1 [50%]; Desarrollador 2 [50%] | 8h | 400 |
| 59 | 1.6.3.2 | Proveedores - Baja | 2d | 2008-12-23 | 2008-12-24 | 58 | 0d | Desarrollador 1 [50%]; Desarrollador 2 [50%] | 8h | 400 |
| 60 | 1.6.3.3 | Proveedores - Modificación | 2d | 2008-12-24 | 2008-12-25 | 59 | 0d | Desarrollador 1 [50%]; Desarrollador 2 [50%] | 8h | 400 |
| 61 | 1.6.3.4 | Proveedores - Consulta | 2d | 2008-12-25 | 2008-12-26 | 60 | 0d | Desarrollador 1 [50%]; Desarrollador 2 [50%] | 8h | 400 |
| 62 | 1.6.3.5 | Proveedores - Prueba Unitaria | 2d | 2008-12-26 | 2008-12-29 | 61 | 0d | Tester 1 [50%]; Tester 2 [50%] | 8h | 200 |
| 63 | 1.6.4 | **Módulo Insumos** | 10d | 2008-12-29 | 2009-01-05 | 57 | 0d |  | 40h | 1,800 |
| 64 | 1.6.4.1 | Insumos - Alta | 2d | 2008-12-29 | 2008-12-30 |  | 0d | Desarrollador 1 [50%]; Desarrollador 2 [50%] | 8h | 400 |
| 65 | 1.6.4.2 | Insumos - Baja | 2d | 2008-12-30 | 2008-12-31 | 64 | 0d | Desarrollador 1 [50%]; Desarrollador 2 [50%] | 8h | 400 |
| 66 | 1.6.4.3 | Insumos - Modificación | 2d | 2008-12-31 | 2009-01-01 | 65 | 0d | Desarrollador 1 [50%]; Desarrollador 2 [50%] | 8h | 400 |
| 67 | 1.6.4.4 | Insumos - Consulta | 2d | 2009-01-01 | 2009-01-02 | 66 | 0d | Desarrollador 1 [50%]; Desarrollador 2 [50%] | 8h | 400 |
| 68 | 1.6.4.5 | Insumos - Prueba Unitaria | 2d | 2009-01-02 | 2009-01-05 | 67 | 0d | Tester 1 [50%]; Tester 2 [50%] | 8h | 200 |
| 69 | 1.6.5 | **Módulo Seguridad** | 30d | 2009-01-05 | 2009-01-26 | 63 | 0d |  | 120h | 5,600 |
| 70 | 1.6.5.1 | **Submódulo Usuarios** | 10d | 2009-01-05 | 2009-01-12 |  | 0d |  | 40h | 1,800 |
| 71 | 1.6.5.1.1 | Usuarios - Alta | 2d | 2009-01-05 | 2009-01-06 |  | 0d | Desarrollador 1 [50%]; Desarrollador 2 [50%] | 8h | 400 |
| 72 | 1.6.5.1.2 | Usuarios - Baja | 2d | 2009-01-06 | 2009-01-07 | 71 | 0d | Desarrollador 1 [50%]; Desarrollador 2 [50%] | 8h | 400 |
| 73 | 1.6.5.1.3 | Usuarios - Modificación | 2d | 2009-01-07 | 2009-01-08 | 72 | 0d | Desarrollador 1 [50%]; Desarrollador 2 [50%] | 8h | 400 |
| 74 | 1.6.5.1.4 | Usuarios - Consulta | 2d | 2009-01-08 | 2009-01-09 | 73 | 0d | Desarrollador 1 [50%]; Desarrollador 2 [50%] | 8h | 400 |
| 75 | 1.6.5.1.5 | Usuarios - Prueba Unitaria | 2d | 2009-01-09 | 2009-01-12 | 74 | 0d | Tester 1 [50%]; Tester 2 [50%] | 8h | 200 |

| ID | WBS | Task | Duration | Start | Finish | Predecessors | Total slack | Resources | Work | Cost |
| --- | --- | --- | --- | --- | --- | --- | --- | --- | --- | --- |
| 76 | 1.6.5.2 | **Submódulo Perfiles** | 10d | 2009-01-12 | 2009-01-19 | 70 | 0d |  | 40h | 1,800 |
| 77 | 1.6.5.2.1 | Perfiles - Alta | 2d | 2009-01-12 | 2009-01-13 |  | 0d | Desarrollador 1 [50%]; Desarrollador 2 [50%] | 8h | 400 |
| 78 | 1.6.5.2.2 | Perfiles - Baja | 2d | 2009-01-13 | 2009-01-14 | 77 | 0d | Desarrollador 1 [50%]; Desarrollador 2 [50%] | 8h | 400 |
| 79 | 1.6.5.2.3 | Perfiles - Modificación | 2d | 2009-01-14 | 2009-01-15 | 78 | 0d | Desarrollador 1 [50%]; Desarrollador 2 [50%] | 8h | 400 |
| 80 | 1.6.5.2.4 | Perfiles - Consulta | 2d | 2009-01-15 | 2009-01-16 | 79 | 0d | Desarrollador 1 [50%]; Desarrollador 2 [50%] | 8h | 400 |
| 81 | 1.6.5.2.5 | Perfiles - Prueba Unitaria | 2d | 2009-01-16 | 2009-01-19 | 80 | 0d | Tester 1 [50%]; Tester 2 [50%] | 8h | 200 |
| 82 | 1.6.5.3 | **Submódulo Gestión de Seguridad** | 10d | 2009-01-19 | 2009-01-26 | 76 | 0d |  | 40h | 2,000 |
| 83 | 1.6.5.3.1 | Gestión Seguridad - Consulta | 4d | 2009-01-19 | 2009-01-21 |  | 0d | Desarrollador 1 [50%]; Desarrollador 2 [50%] | 16h | 800 |
| 84 | 1.6.5.3.2 | Gestión de Seguridad - Asignación a Perfiles | 6d | 2009-01-21 | 2009-01-26 | 83 | 0d | Desarrollador 1 [50%]; Desarrollador 2 [50%] | 24h | 1,200 |
| 85 | 1.6.6 | **Módulo Personal Técnico** | 10d | 2009-01-26 | 2009-02-02 | 69 | 0d |  | 40h | 1,800 |
| 86 | 1.6.6.1 | Personal Técnico - Alta | 2d | 2009-01-26 | 2009-01-27 |  | 0d | Desarrollador 1 [50%]; Desarrollador 2 [50%] | 8h | 400 |
| 87 | 1.6.6.2 | Personal Técnico - Baja | 2d | 2009-01-27 | 2009-01-28 | 86 | 0d | Desarrollador 1 [50%]; Desarrollador 2 [50%] | 8h | 400 |
| 88 | 1.6.6.3 | Personal Técnico - Modificación | 2d | 2009-01-28 | 2009-01-29 | 87 | 0d | Desarrollador 1 [50%]; Desarrollador 2 [50%] | 8h | 400 |
| 89 | 1.6.6.4 | Personal Técnico - Consulta | 2d | 2009-01-29 | 2009-01-30 | 88 | 0d | Desarrollador 1 [50%]; Desarrollador 2 [50%] | 8h | 400 |
| 90 | 1.6.6.5 | Personal Técnico - Prueba Unitaria | 2d | 2009-01-30 | 2009-02-02 | 89 | 0d | Tester 1 [50%]; Tester 2 [50%] | 8h | 200 |
| 91 | 1.6.7 | **Módulo Gestión de Tickets** | 42d | 2009-02-02 | 2009-03-03 | 85 | 0d |  | 168h | 7,800 |
| 92 | 1.6.7.1 | **Alta** | 24d | 2009-02-02 | 2009-02-18 |  | 0d |  | 96h | 4,800 |
| 93 | 1.6.7.1.1 | Alta - Generación de Presupuesto | 10d | 2009-02-02 | 2009-02-09 |  | 0d | Desarrollador 1 [50%]; Desarrollador 2 [50%] | 40h | 2,000 |
| 94 | 1.6.7.1.2 | Alta - Asignación a Técnico | 4d | 2009-02-09 | 2009-02-11 | 93 | 0d | Desarrollador 1 [50%]; Desarrollador 2 [50%] | 16h | 800 |
| 95 | 1.6.7.1.3 | Alta - Asignación de Estados | 10d | 2009-02-11 | 2009-02-18 | 94 | 0d | Desarrollador 1 [50%]; Desarrollador 2 [50%] | 40h | 2,000 |
| 96 | 1.6.7.2 | **Modificación** | 8d | 2009-02-18 | 2009-02-24 | 92 | 0d |  | 32h | 1,600 |
| 97 | 1.6.7.2.1 | Modificación - Presupuesto | 4d | 2009-02-18 | 2009-02-20 |  | 0d | Desarrollador 1 [50%]; Desarrollador 2 [50%] | 16h | 800 |
| 98 | 1.6.7.2.2 | Modificación - Asignación a Técnico | 2d | 2009-02-20 | 2009-02-23 | 97 | 0d | Desarrollador 1 [50%]; Desarrollador 2 [50%] | 8h | 400 |
| 99 | 1.6.7.2.3 | Modificación - Estados | 2d | 2009-02-23 | 2009-02-24 | 98 | 0d | Desarrollador 1 [50%]; Desarrollador 2 [50%] | 8h | 400 |
| 100 | 1.6.7.3 | Gestión de Tickets - Consulta | 4d | 2009-02-24 | 2009-02-26 | 99 | 0d | Desarrollador 1 [50%]; Desarrollador 2 [50%] | 16h | 800 |
| 101 | 1.6.7.4 | Gestión de Tickets - Prueba Unitaria | 6d | 2009-02-26 | 2009-03-03 | 100 | 0d | Tester 1 [50%]; Tester 2 [50%] | 24h | 600 |

| ID | WBS | Task | Duration | Start | Finish | Predecessors | Total slack | Resources | Work | Cost |
| --- | --- | --- | --- | --- | --- | --- | --- | --- | --- | --- |
| 102 | 1.6.8 | **Módulo Alertas** | 26d | 2009-03-03 | 2009-03-20 | 91 | 0d |  | 104h | 4,600 |
| 103 | 1.6.8.1 | Módulo Alertas - Configuración | 10d | 2009-03-03 | 2009-03-10 |  | 0d | Desarrollador 1 [50%]; Desarrollador 2 [50%] | 40h | 2,000 |
| 104 | 1.6.8.2 | Módulo Alertas - Proceso Batch | 10d | 2009-03-10 | 2009-03-17 | 103 | 0d | Desarrollador 1 [50%]; Desarrollador 2 [50%] | 40h | 2,000 |
| 105 | 1.6.8.3 | Módulo Alertas - Prueba Unitaria | 6d | 2009-03-17 | 2009-03-20 | 104 | 0d | Tester 1 [50%]; Tester 2 [50%] | 24h | 600 |
| 106 | 1.6.9 | **Módulo Reportes** | 30d | 2009-03-20 | 2009-04-10 | 102 | 0d |  | 120h | 5,000 |
| 107 | 1.6.9.1 | Módulo Reportes - Desarrollo | 20d | 2009-03-20 | 2009-04-03 |  | 0d | Desarrollador 1 [50%]; Desarrollador 2 [50%] | 80h | 4,000 |
| 108 | 1.6.9.2 | Módulo Reportes - Prueba Unitaria | 10d | 2009-04-03 | 2009-04-10 | 107 | 0d | Tester 1 [50%]; Tester 2 [50%] | 40h | 1,000 |
| 109 | 1.7 | Integración | 10d | 2009-04-10 | 2009-04-17 | 91, 102, 106 | 0d | Desarrollador 1 [50%]; Desarrollador 2 [50%] | 40h | 2,000 |
| 110 | 1.8 | Pruebas de Integración | 20d | 2009-04-17 | 2009-05-01 | 109 | 0d | Tester 1 [50%]; Tester 2 [50%] | 80h | 2,000 |
| 111 | 1.9 | Implementación | 6d | 2009-05-01 | 2009-05-06 | 110 | 0d | Analista 1; Analista 2; Analista 3; Analista 4; Lider Proyecto | 120h | 6,600 |
