# v1.3

Schedule from MS Project, 2008-09-01 to 2009-05-12, 4 hours a day, costs in $, A marks actual dates.
F.G.E.

## Calendars

- Estándar: Mon-Fri 09:00-13:00, 15:00-19:00; Sat-Sun off. Exceptions (off unless hours are given): 2008-09-09 09:00-13:00.

## Resources

| Resource | Rate |
| --- | --- |
| Analista 1 | 25 |
| Analista 2 | 25 |
| Lider Proyecto | 50 |
| Desarrollador 1 | 25 |
| Desarrollador 2 | 25 |
| Analista 3 | 25 |
| Analista 4 | 25 |
| Tester 1 | 25 |
| Tester 2 | 25 |
| Desarrollador |  |
| Analista |  |

## Schedule

| ID | WBS | Task | Type | Duration | Start | Finish | Predecessors | Complete | Remaining | Total slack | Constraint | Resources | Work | Actual work | Cost | Actual cost |
| --- | --- | --- | --- | --- | --- | --- | --- | --- | --- | --- | --- | --- | --- | --- | --- | --- |
| 1 | 1 | **Cronograma Proyeto SETI** |  | 360.92d? | 2008-09-01 A | 2009-05-12 |  | 56% | 158.21d? | 0d |  | Lider Proyecto [15%] | 2206.15h | 1161.95h | 65,965.06 | 36,460.02 |
| 2 | 1.1 | **Relevamiento** |  | 18.75d | 2008-09-01 A | 2008-09-12 A |  | 100% |  |  |  |  | 56h | 56h | 1,600 | 1,600 |
| 3 | 1.1.1 | Relevamiento - Entrevistas |  | 2d | 2008-09-01 A | 2008-09-01 A |  | 100% |  |  | start no earlier than 2008-09-01 | Analista 1 | 8h | 8h | 200 | 200 |
| 4 | 1.1.2 | **Documentación Inicial** |  | 16.75d | 2008-09-02 A | 2008-09-12 A |  | 100% |  |  |  |  | 48h | 48h | 1,400 | 1,400 |
| 5 | 1.1.2.1 | Documentación Inicial - Desarrollo |  | 16d | 2008-09-02 A | 2008-09-11 A | 3 | 100% |  |  |  | Analista 1 [25%]; Analista 2 [25%]; Analista 3 [25%]; Analista 4 [25%] | 40h | 40h | 1,000 | 1,000 |
| 6 | 1.1.2.2 | Documentación Inicial - Integración |  | 2d | 2008-09-12 A | 2008-09-12 A | 5 | 100% |  |  |  | Lider Proyecto | 8h | 8h | 400 | 400 |
| 7 | 1.1.2.3 | Documentacion Inicial - Entrega | milestone | 0d | 2008-09-12 A | 2008-09-12 A | 6 | 100% |  |  |  | Lider Proyecto |  |  |  |  |
| 8 | 1.2 | **Análisis** |  | 67.55d | 2008-09-15 A | 2008-10-30 A | 4 | 100% |  |  |  |  | 340h | 340h | 9,232.56 | 9,232.56 |
| 9 | 1.2.1 | **Casos de Uso de Negocio** |  | 25.75d | 2008-09-15 A | 2008-10-01 A |  | 100% |  |  |  |  | 152h | 152h | 3,800 | 3,800 |
| 10 | 1.2.1.1 | C.U.Negocio - Clientes |  | 2d | 2008-09-15 A | 2008-09-15 A |  | 100% |  |  |  | Analista 1 | 8h | 8h | 200 | 200 |
| 11 | 1.2.1.2 | C.U.Negocio - Proveedores |  | 2d | 2008-09-15 A | 2008-09-15 A |  | 100% |  |  |  | Analista 2 | 8h | 8h | 200 | 200 |
| 12 | 1.2.1.3 | C.U.Negocio - Insumos |  | 2d | 2008-09-15 A | 2008-09-15 A |  | 100% |  |  |  | Analista 3 | 8h | 8h | 200 | 200 |
| 13 | 1.2.1.4 | C.U.Negocio - Seguridad |  | 12d | 2008-09-16 A | 2008-09-23 A | 11 | 100% |  |  |  | Analista 3 | 48h | 48h | 1,200 | 1,200 |
| 14 | 1.2.1.5 | C.U.Negocio - Personal Técnico |  | 2d | 2008-09-16 A | 2008-09-16 A | 11 | 100% |  |  |  | Analista 4 | 8h | 8h | 200 | 200 |
| 15 | 1.2.1.6 | C.U.Negocio - Gestión Tickets |  | 12d | 2008-09-24 A | 2008-10-01 A | 13 | 100% |  |  |  | Analista 3 | 48h | 48h | 1,200 | 1,200 |
| 16 | 1.2.1.7 | C.U.Negocio - Alertas |  | 6d | 2008-09-24 A | 2008-09-26 A | 13 | 100% |  |  |  | Analista 4 | 24h | 24h | 600 | 600 |
| 17 | 1.2.2 | **Casos de Uso de Sistema** |  | 35.75d | 2008-09-16 A | 2008-10-09 A |  | 100% |  |  |  |  | 152h | 152h | 3,800 | 3,800 |
| 18 | 1.2.2.1 | Módulo Clientes |  | 2d | 2008-09-16 A | 2008-09-16 A | 10 | 100% |  |  |  | Analista 1 | 8h | 8h | 200 | 200 |
| 19 | 1.2.2.2 | Módulo Proveedores |  | 2d | 2008-09-16 A | 2008-09-16 A | 11 | 100% |  |  |  | Analista 2 | 8h | 8h | 200 | 200 |
| 20 | 1.2.2.3 | Módulo Insumos |  | 2d | 2008-09-17 A | 2008-09-17 A | 12, 18 | 100% |  |  |  | Analista 1 | 8h | 8h | 200 | 200 |
| 21 | 1.2.2.4 | Módulo Seguridad |  | 12d | 2008-09-24 A | 2008-10-01 A | 19, 13 | 100% |  |  |  | Analista 2 | 48h | 48h | 1,200 | 1,200 |
| 22 | 1.2.2.5 | Módulo Personal Técnico |  | 2d | 2008-09-17 A | 2008-09-17 A | 19, 14 | 100% |  |  |  | Analista 4 | 8h | 8h | 200 | 200 |
| 23 | 1.2.2.6 | Módulo Gestión Tickets |  | 12d | 2008-10-02 A | 2008-10-09 A | 21, 15 | 100% |  |  |  | Analista 1 | 48h | 48h | 1,200 | 1,200 |
| 24 | 1.2.2.7 | Módulo Alertas |  | 6d | 2008-10-02 A | 2008-10-06 A | 21, 16 | 100% |  |  |  | Analista 4 | 24h | 24h | 600 | 600 |

Notes:
- 20: Dependencia de la 18 por Solapamiento de Recursos

| ID | WBS | Task | Type | Duration | Start | Finish | Predecessors | Complete | Remaining | Total slack | Free slack | Constraint | Resources | Work | Actual work | Cost | Actual cost |
| --- | --- | --- | --- | --- | --- | --- | --- | --- | --- | --- | --- | --- | --- | --- | --- | --- | --- |
| 25 | 1.2.3 | **Modelo de Análisis** |  | 29.55d | 2008-10-10 A | 2008-10-30 A | 17 | 100% |  |  |  |  |  | 36h | 36h | 1,632.56 | 1,632.56 |
| 26 | 1.2.3.1 | Modelo de Análisis - Integración Documentación |  | 29.3d | 2008-10-10 A | 2008-10-30 A |  | 100% |  |  |  |  | Lider Proyecto [25%]; Analista 1 [75%] | 36h | 36h | 1,632.56 | 1,632.56 |
| 27 | 1.2.3.2 | Modelo de Análisis - Entrega | milestone | 0d | 2008-10-30 A | 2008-10-30 A | 26 | 100% |  |  |  |  | Lider Proyecto |  |  |  |  |
| 28 | 1.3 | **Diseño** |  | 28.45d | 2008-10-30 A | 2008-11-20 A | 8 | 100% |  |  |  |  |  | 112h | 112h | 2,900 | 2,900 |
| 29 | 1.3.1 | Diseño - Diagrama de Clases |  | 6d | 2008-10-30 A | 2008-11-04 A |  | 100% |  |  |  |  | Analista 1 | 24h | 24h | 600 | 600 |
| 30 | 1.3.2 | Diseño - Diagrama de Interacción |  | 6d | 2008-11-04 A | 2008-11-07 A | 29 | 100% |  |  |  |  | Analista 2 | 24h | 24h | 600 | 600 |
| 31 | 1.3.3 | Diseño - Diagrama de Secuencia |  | 6d | 2008-11-07 A | 2008-11-12 A | 30 | 100% |  |  |  |  | Analista 3 | 24h | 24h | 600 | 600 |
| 32 | 1.3.4 | Diseño - Diagrama de Entidad Relación |  | 6d | 2008-11-12 A | 2008-11-17 A | 31 | 100% |  |  |  |  | Analista 4 | 24h | 24h | 600 | 600 |
| 33 | 1.3.5 | Diseño - Integración Documentación |  | 4d | 2008-11-17 A | 2008-11-19 A | 32 | 100% |  |  |  |  | Lider Proyecto [25%]; Analista 3 [75%] | 16h | 16h | 500 | 500 |
| 34 | 1.3.6 | Diseño - Entrega | milestone | 0d | 2008-11-20 A | 2008-11-20 A | 33 | 100% |  |  |  | start no earlier than 2008-11-20 | Lider Proyecto |  |  |  |  |
| 35 | 1.4 | Revisión de Entregas Realizadas |  | 30d | 2008-11-20 A | 2008-12-10 A | 2, 8, 28 | 100% |  |  |  |  | Lider Proyecto | 120h | 120h | 6,000 | 6,000 |
| 36 | 1.5 | Aprobación de la Cursada | milestone | 0d | 2008-12-10 A | 2008-12-10 A | 35 | 100% |  |  |  |  |  |  |  |  |  |
| 37 | 1.6 | **Modelo de Testing** |  | 118.75d? | 2008-12-29 A | 2009-03-23 | 36 | 80% | 23.75d? | 71.58d |  |  |  | 120h | 96h | 3,100 | 2,450 |
| 38 | 1.6.1 | Mod.Testing - Clientes |  | 2d | 2008-12-29 A | 2008-12-30 A | 55 | 100% |  |  |  |  | Analista 1 | 8h | 8h | 200 | 200 |
| 39 | 1.6.2 | Mod.Testing - Proveedores |  | 2d | 2009-01-02 A | 2009-01-05 A | 61 | 100% |  |  |  |  | Analista 2 | 8h | 8h | 200 | 200 |
| 40 | 1.6.3 | Mod.Testing - Insumos |  | 1.75d | 2009-01-13 A | 2009-01-14 | 70 | 57% | 0.75d | 36.9d | 0d |  | Analista 3 | 7h | 4h | 175 | 100 |
| 41 | 1.6.4 | **Mod.Testing - Seguridad** |  | 26d? | 2009-01-16 A | 2009-02-04 A | 39 | 100% |  |  |  |  |  | 24h | 24h | 600 | 600 |
| 42 | 1.6.4.1 | Submódulo Usuarios |  | 2d? | 2009-01-16 A | 2009-01-19 A | 74 | 100% |  |  |  |  | Analista 1 | 8h | 8h | 200 | 200 |
| 43 | 1.6.4.2 | Submódulo Perfiles |  | 2d? | 2009-01-22 A | 2009-01-23 A | 80 | 100% |  |  |  |  | Analista 1 | 8h | 8h | 200 | 200 |
| 44 | 1.6.4.3 | Gestión de Seguridad - Integración |  | 2d? | 2009-02-03 A | 2009-02-04 A | 87 | 100% |  |  |  |  | Analista 1 | 8h | 8h | 200 | 200 |
| 45 | 1.6.5 | Mod.Testing - Personal Técnico |  | 2d | 2009-02-06 A | 2009-02-09 A | 90 | 100% |  |  |  |  | Analista 4 | 8h | 8h | 200 | 200 |
| 46 | 1.6.6 | Mod.Testing - Gestión Tickets |  | 6.25d | 2009-02-27 A | 2009-03-04 | 96 | 48% | 3.25d | 17.58d | 0d |  | Analista 2 | 25h | 12h | 625 | 300 |
| 47 | 1.6.7 | Mod.Testing - Alertas |  | 6d | 2009-03-16 A | 2009-03-19 A | 107 | 100% |  |  |  |  | Analista 4 | 24h | 24h | 600 | 600 |
| 48 | 1.6.8 | Mod.Testing - Integración Documentación |  | 4d | 2009-03-19 A | 2009-03-23 | 47 | 50% | 2d | 71.58d | 0d |  | Lider Proyecto [25%]; Analista 2 [75%] | 16h | 8h | 500 | 250 |
| 49 | 1.6.9 | Mod.Testing - Entrega | milestone | 0d | 2009-03-23 | 2009-03-23 | 48 |  |  | 71.58d |  |  | Lider Proyecto |  |  |  |  |

| ID | WBS | Task | Duration | Start | Finish | Predecessors | Complete | Remaining | Total slack | Free slack | Resources | Work | Actual work | Cost | Actual cost |
| --- | --- | --- | --- | --- | --- | --- | --- | --- | --- | --- | --- | --- | --- | --- | --- |
| 50 | 1.7 | **Desarrollo** | 170.58d? | 2008-12-11 A | 2009-04-09 | 36 | 41% | 99.95d? | 0d |  |  | 751h | 304.8h | 18,775 | 7,620 |
| 51 | 1.7.1 | **Construcción Base de Datos** | 23.33d | 2008-12-11 A | 2008-12-26 |  | 79% | 4.8d | 57.13d | 0.25d |  | 79h | 60h | 1,975 | 1,500 |
| 52 | 1.7.1.1 | Generación Tablas | 13.33d | 2008-12-11 A | 2008-12-19 A |  | 100% |  |  |  | Desarrollador 1 [50%]; Desarrollador 2 [50%] | 40h | 40h | 1,000 | 1,000 |
| 53 | 1.7.1.2 | Poblado y Resguardo | 9.75d | 2008-12-19 A | 2008-12-26 | 52 | 51% | 4.75d | 57.13d |  | Desarrollador 2 [50%]; Desarrollador 1 [50%] | 39h | 20h | 975 | 500 |
| 54 | 1.7.2 | **Módulo Clientes** | 8d | 2008-12-26 A | 2009-01-01 | 51 | 72% | 2.24d | 51.12d | 0d |  | 40h | 28.8h | 1,000 | 720 |
| 55 | 1.7.2.1 | Clientes - Alta | 2d | 2008-12-26 A | 2008-12-29 |  | 90% | 0.2d | 56.52d | 0d | Desarrollador 1 [50%]; Desarrollador 2 [50%] | 8h | 7.2h | 200 | 180 |
| 56 | 1.7.2.2 | Clientes - Baja | 2d | 2008-12-29 A | 2008-12-30 | 55 | 90% | 0.2d | 54.72d | 0d | Desarrollador 1 [50%]; Desarrollador 2 [50%] | 8h | 7.2h | 200 | 180 |
| 57 | 1.7.2.3 | Clientes - Modificación | 2d | 2008-12-30 A | 2008-12-31 | 56 | 90% | 0.2d | 52.92d | 0d | Desarrollador 1 [50%]; Desarrollador 2 [50%] | 8h | 7.2h | 200 | 180 |
| 58 | 1.7.2.4 | Clientes - Consulta | 2d | 2008-12-31 A | 2009-01-01 | 57 | 90% | 0.2d | 51.12d |  | Desarrollador 1 [50%]; Desarrollador 2 [50%] | 8h | 7.2h | 200 | 180 |
| 59 | 1.7.2.5 | Clientes - Prueba Unitaria | 2d | 2008-12-30 | 2008-12-31 | 38 |  |  | 53.12d |  | Tester 1 [50%]; Tester 2 [50%] | 8h |  | 200 |  |
| 60 | 1.7.3 | **Módulo Proveedores** | 8d | 2009-01-01 A | 2009-01-07 | 54 | 72% | 2.24d | 45.36d | 0d |  | 40h | 28.8h | 1,000 | 720 |
| 61 | 1.7.3.1 | Proveedores - Alta | 2d | 2009-01-01 A | 2009-01-02 |  | 90% | 0.2d | 50.76d | 0d | Desarrollador 1 [50%]; Desarrollador 2 [50%] | 8h | 7.2h | 200 | 180 |
| 62 | 1.7.3.2 | Proveedores - Baja | 2d | 2009-01-02 A | 2009-01-05 | 61 | 90% | 0.2d | 48.96d | 0d | Desarrollador 1 [50%]; Desarrollador 2 [50%] | 8h | 7.2h | 200 | 180 |
| 63 | 1.7.3.3 | Proveedores - Modificación | 2d | 2009-01-05 A | 2009-01-06 | 62 | 90% | 0.2d | 47.16d | 0d | Desarrollador 1 [50%]; Desarrollador 2 [50%] | 8h | 7.2h | 200 | 180 |
| 64 | 1.7.3.4 | Proveedores - Consulta | 2d | 2009-01-06 A | 2009-01-07 | 63 | 90% | 0.2d | 45.36d |  | Desarrollador 1 [50%]; Desarrollador 2 [50%] | 8h | 7.2h | 200 | 180 |
| 65 | 1.7.3.5 | Proveedores - Prueba Unitaria | 2d | 2009-01-05 | 2009-01-06 | 39 |  |  | 47.36d |  | Tester 1 [50%]; Tester 2 [50%] | 8h |  | 200 |  |
| 66 | 1.7.4 | **Módulo Insumos** | 11.75d | 2009-01-07 A | 2009-01-15 | 60 | 72% | 3.29d | 36.9d | 0.25d |  | 40h | 28.8h | 1,000 | 720 |
| 67 | 1.7.4.1 | Insumos - Alta | 2d | 2009-01-07 A | 2009-01-08 |  | 90% | 0.2d | 43.3d | 0d | Desarrollador 1 [50%]; Desarrollador 2 [50%] | 8h | 7.2h | 200 | 180 |
| 68 | 1.7.4.2 | Insumos - Baja | 2d | 2009-01-08 A | 2009-01-09 | 67 | 90% | 0.2d | 41.5d | 0d | Desarrollador 1 [50%]; Desarrollador 2 [50%] | 8h | 7.2h | 200 | 180 |
| 69 | 1.7.4.3 | Insumos - Modificación | 2d | 2009-01-09 A | 2009-01-12 | 68 | 90% | 0.2d | 39.7d | 0d | Desarrollador 1 [50%]; Desarrollador 2 [50%] | 8h | 7.2h | 200 | 180 |
| 70 | 1.7.4.4 | Insumos - Consulta | 2d | 2009-01-12 A | 2009-01-13 | 69 | 90% | 0.2d | 37.9d | 0d | Desarrollador 1 [50%]; Desarrollador 2 [50%] | 8h | 7.2h | 200 | 180 |
| 71 | 1.7.4.5 | Insumos - Prueba Unitaria | 2d | 2009-01-14 | 2009-01-15 | 40 |  |  | 36.9d |  | Tester 1 [50%]; Tester 2 [50%] | 8h |  | 200 |  |
| 72 | 1.7.5 | **Módulo Seguridad** | 29d? | 2009-01-15 A | 2009-02-05 | 66 | 37% | 18.17d? | 25.82d | 0d |  | 116h | 44.8h | 2,900 | 1,120 |
| 73 | 1.7.5.1 | **Submódulo Usuarios** | 8d | 2009-01-15 A | 2009-01-21 |  | 72% | 2.24d | 32.51d | 0d |  | 40h | 28.8h | 1,000 | 720 |
| 74 | 1.7.5.1.1 | Usuarios - Alta | 2d | 2009-01-15 A | 2009-01-16 |  | 90% | 0.2d | 37.91d | 0d | Desarrollador 1 [50%]; Desarrollador 2 [50%] | 8h | 7.2h | 200 | 180 |
| 75 | 1.7.5.1.2 | Usuarios - Baja | 2d | 2009-01-16 A | 2009-01-19 | 74 | 90% | 0.2d | 36.11d | 0d | Desarrollador 1 [50%]; Desarrollador 2 [50%] | 8h | 7.2h | 200 | 180 |
| 76 | 1.7.5.1.3 | Usuarios - Modificación | 2d | 2009-01-19 A | 2009-01-20 | 75 | 90% | 0.2d | 34.31d | 0d | Desarrollador 1 [50%]; Desarrollador 2 [50%] | 8h | 7.2h | 200 | 180 |
| 77 | 1.7.5.1.4 | Usuarios - Consulta | 2d | 2009-01-20 A | 2009-01-21 | 76 | 90% | 0.2d | 32.51d |  | Desarrollador 1 [50%]; Desarrollador 2 [50%] | 8h | 7.2h | 200 | 180 |
| 78 | 1.7.5.1.5 | Usuarios - Prueba Unitaria | 2d | 2009-01-19 | 2009-01-20 | 42 |  |  | 34.51d |  | Tester 1 [50%]; Tester 2 [50%] | 8h |  | 200 |  |

| ID | WBS | Task | Duration | Start | Finish | Predecessors | Complete | Remaining | Total slack | Free slack | Resources | Work | Actual work | Cost | Actual cost |
| --- | --- | --- | --- | --- | --- | --- | --- | --- | --- | --- | --- | --- | --- | --- | --- |
| 79 | 1.7.5.2 | **Submódulo Perfiles** | 7.75d | 2009-01-21 A | 2009-01-27 | 73 | 44% | 4.31d | 29.07d | 0d |  | 36h | 16h | 900 | 400 |
| 80 | 1.7.5.2.1 | Perfiles - Alta | 1.75d | 2009-01-21 A | 2009-01-22 |  | 57% | 0.75d | 32.82d | 0.25d | Desarrollador 1 [50%]; Desarrollador 2 [50%] | 7h | 4h | 175 | 100 |
| 81 | 1.7.5.2.2 | Perfiles - Baja | 1.75d | 2009-01-22 A | 2009-01-23 | 80 | 57% | 0.75d | 31.57d | 0.25d | Desarrollador 1 [50%]; Desarrollador 2 [50%] | 7h | 4h | 175 | 100 |
| 82 | 1.7.5.2.3 | Perfiles - Modificación | 1.75d | 2009-01-23 A | 2009-01-26 | 81 | 57% | 0.75d | 30.32d | 0.25d | Desarrollador 1 [50%]; Desarrollador 2 [50%] | 7h | 4h | 175 | 100 |
| 83 | 1.7.5.2.4 | Perfiles - Consulta | 1.75d | 2009-01-26 A | 2009-01-27 | 82 | 57% | 0.75d | 29.07d |  | Desarrollador 1 [50%]; Desarrollador 2 [50%] | 7h | 4h | 175 | 100 |
| 84 | 1.7.5.2.5 | Perfiles - Prueba Unitaria | 2d | 2009-01-23 | 2009-01-26 | 43 |  |  | 30.82d |  | Tester 1 [50%]; Tester 2 [50%] | 8h |  | 200 |  |
| 85 | 1.7.5.3 | **Submódulo Gestión de Seguridad** | 13.25d? | 2009-01-27 | 2009-02-05 | 79 |  |  | 25.82d |  |  | 40h |  | 1,000 |  |
| 86 | 1.7.5.3.1 | Gestión Seguridad - Consulta | 4d | 2009-01-27 | 2009-01-29 |  |  |  | 29.07d | 0d | Desarrollador 1 [50%]; Desarrollador 2 [50%] | 16h |  | 400 |  |
| 87 | 1.7.5.3.2 | Gestión de Seguridad - Asignación a Perfiles | 6d | 2009-01-29 | 2009-02-03 | 86 |  |  | 29.07d |  | Desarrollador 1 [50%]; Desarrollador 2 [50%] | 24h |  | 600 |  |
| 88 | 1.7.5.3.3 | Gestión de Seguridad - Prueba de integración | 1d? | 2009-02-04 | 2009-02-05 | 44 |  |  | 25.82d |  |  |  |  |  |  |
| 89 | 1.7.6 | **Módulo Personal Técnico** | 8d | 2009-02-05 A | 2009-02-11 | 72 | 72% | 2.24d | 20.31d | 0d |  | 40h | 28.8h | 1,000 | 720 |
| 90 | 1.7.6.1 | Personal Técnico - Alta | 2d | 2009-02-05 A | 2009-02-06 |  | 90% | 0.2d | 25.71d | 0d | Desarrollador 1 [50%]; Desarrollador 2 [50%] | 8h | 7.2h | 200 | 180 |
| 91 | 1.7.6.2 | Personal Técnico - Baja | 2d | 2009-02-06 A | 2009-02-09 | 90 | 90% | 0.2d | 23.91d | 0d | Desarrollador 1 [50%]; Desarrollador 2 [50%] | 8h | 7.2h | 200 | 180 |
| 92 | 1.7.6.3 | Personal Técnico - Modificación | 2d | 2009-02-09 A | 2009-02-10 | 91 | 90% | 0.2d | 22.11d | 0d | Desarrollador 1 [50%]; Desarrollador 2 [50%] | 8h | 7.2h | 200 | 180 |
| 93 | 1.7.6.4 | Personal Técnico - Consulta | 2d | 2009-02-10 A | 2009-02-11 | 92 | 90% | 0.2d | 20.31d |  | Desarrollador 1 [50%]; Desarrollador 2 [50%] | 8h | 7.2h | 200 | 180 |
| 94 | 1.7.6.5 | Personal Técnico - Prueba Unitaria | 2d | 2009-02-09 | 2009-02-10 | 45 |  |  | 22.31d |  | Tester 1 [50%]; Tester 2 [50%] | 8h |  | 200 |  |
| 95 | 1.7.7 | **Módulo Gestión de Tickets** | 36.25d | 2009-02-11 A | 2009-03-09 | 89 | 8% | 33.52d | 17.58d | 0d |  | 170h | 12.8h | 4,250 | 320 |
| 96 | 1.7.7.1 | **Alta** | 24.25d | 2009-02-11 A | 2009-02-27 |  | 10% | 21.87d | 18.38d | 0d |  | 98h | 9.6h | 2,450 | 240 |
| 97 | 1.7.7.1.1 | Alta - Generación de Presupuesto | 10.25d | 2009-02-11 A | 2009-02-18 |  | 10% | 9.25d | 19.53d | 0d | Desarrollador 1 [50%]; Desarrollador 2 [50%] | 41h | 4h | 1,025 | 100 |
| 98 | 1.7.7.1.2 | Alta - Asignación a Técnico | 4d | 2009-02-18 A | 2009-02-20 | 97 | 10% | 3.6d | 19.38d | 0d | Desarrollador 1 [50%]; Desarrollador 2 [50%] | 16h | 1.6h | 400 | 40 |
| 99 | 1.7.7.1.3 | Alta - Asignación de Estados | 10.25d | 2009-02-20 A | 2009-02-27 | 98 | 10% | 9.25d | 18.38d |  | Desarrollador 1 [50%]; Desarrollador 2 [50%] | 41h | 4h | 1,025 | 100 |
| 100 | 1.7.7.2 | **Modificación** | 8d | 2009-02-27 A | 2009-03-05 | 96 | 10% | 7.2d | 17.83d |  |  | 32h | 3.2h | 800 | 80 |
| 101 | 1.7.7.2.1 | Modificación - Presupuesto | 4d | 2009-02-27 A | 2009-03-03 |  | 10% | 3.6d | 18.23d | 0d | Desarrollador 1 [50%]; Desarrollador 2 [50%] | 16h | 1.6h | 400 | 40 |
| 102 | 1.7.7.2.2 | Modificación - Asignación a Técnico | 2d | 2009-03-03 A | 2009-03-04 | 101 | 10% | 1.8d | 18.03d | 0d | Desarrollador 1 [50%]; Desarrollador 2 [50%] | 8h | 0.8h | 200 | 20 |
| 103 | 1.7.7.2.3 | Modificación - Estados | 2d | 2009-03-04 A | 2009-03-05 | 102 | 10% | 1.8d | 17.83d | 0d | Desarrollador 1 [50%]; Desarrollador 2 [50%] | 8h | 0.8h | 200 | 20 |
| 104 | 1.7.7.3 | Gestión de Tickets - Consulta | 4d | 2009-03-05 | 2009-03-09 | 103 |  |  | 17.83d |  | Desarrollador 1 [50%]; Desarrollador 2 [50%] | 16h |  | 400 |  |
| 105 | 1.7.7.4 | Gestión de Tickets - Prueba Unitaria | 6d | 2009-03-04 | 2009-03-09 | 46 |  |  | 17.58d |  | Tester 1 [50%]; Tester 2 [50%] | 24h |  | 600 |  |

| ID | WBS | Task | Type | Duration | Start | Finish | Predecessors | Complete | Remaining | Total slack | Free slack | Resources | Work | Actual work | Cost | Actual cost |
| --- | --- | --- | --- | --- | --- | --- | --- | --- | --- | --- | --- | --- | --- | --- | --- | --- |
| 106 | 1.7.8 | **Módulo Alertas** |  | 26.25d | 2009-03-09 A | 2009-03-26 | 95 | 68% | 8.42d | 0d |  |  | 106h | 72h | 2,650 | 1,800 |
| 107 | 1.7.8.1 | Módulo Alertas - Configuración |  | 10.25d | 2009-03-09 A | 2009-03-16 |  | 88% | 1.25d | 9d | 0d | Desarrollador 1 [50%]; Desarrollador 2 [50%] | 41h | 36h | 1,025 | 900 |
| 108 | 1.7.8.2 | Módulo Alertas - Proceso Batch |  | 10.25d | 2009-03-16 A | 2009-03-23 | 107 | 88% | 1.25d | 0d |  | Desarrollador 1 [50%]; Desarrollador 2 [50%] | 41h | 36h | 1,025 | 900 |
| 109 | 1.7.8.3 | Módulo Alertas - Prueba Unitaria |  | 6d | 2009-03-23 | 2009-03-26 | 108 |  |  | 0d |  | Tester 1 [50%]; Tester 2 [50%] | 24h |  | 600 |  |
| 110 | 1.7.9 | **Módulo Reportes** |  | 20d | 2009-03-26 | 2009-04-09 | 106 |  |  | 0d |  |  | 120h |  | 3,000 |  |
| 111 | 1.7.9.1 | Módulo Reportes - Desarrollo |  | 20d | 2009-03-26 | 2009-04-09 |  |  |  | 0d |  | Desarrollador 1 [50%]; Desarrollador 2 [50%] | 80h |  | 2,000 |  |
| 112 | 1.7.9.2 | Módulo Reportes - Prueba Unitaria |  | 10d | 2009-03-26 | 2009-04-02 | 47 |  |  | 10d |  | Tester 1 [50%]; Tester 2 [50%] | 40h |  | 1,000 |  |
| 113 | 1.8 | Integración |  | 10d | 2009-04-09 | 2009-04-16 | 95, 106, 110 |  |  | 0d |  | Desarrollador 1 [50%]; Desarrollador 2 [50%] | 40h |  | 1,000 |  |
| 114 | 1.9 | Pruebas de Integración |  | 20d | 2009-04-16 | 2009-04-30 | 113 |  |  | 15.33d |  | Tester 1 [50%]; Tester 2 [50%] | 80h |  | 2,000 |  |
| 115 | 1.10 | **Armar producto** |  | 20d | 2009-04-16 | 2009-04-30 | 113 |  |  | 0d |  |  | 240h |  | 6,000 |  |
| 116 | 1.10.1 | Instalador |  | 10d | 2009-04-16 | 2009-04-23 |  |  |  | 15.33d |  | Desarrollador 1 | 40h |  | 1,000 |  |
| 117 | 1.10.2 | Manual de instalación |  | 10d | 2009-04-23 | 2009-04-30 | 116 |  |  | 15.33d |  | Desarrollador 1 | 40h |  | 1,000 |  |
| 118 | 1.10.3 | Packaging |  | 20d | 2009-04-16 | 2009-04-30 |  |  |  | 0d |  | Analista 1 [50%]; Analista 2 [50%] | 80h |  | 2,000 |  |
| 119 | 1.10.4 | Manual de usuario |  | 20d | 2009-04-16 | 2009-04-30 |  |  |  | 15.33d |  | Analista 3 [50%]; Analista 4 [50%] | 80h |  | 2,000 |  |
| 120 | 1.11 | Producto Terminado - Entregable | milestone | 1d? | 2009-04-30 | 2009-04-30 | 118 |  |  | 0d |  |  |  |  |  |  |
| 121 | 1.12 | Capacitación |  | 1d? | 2009-04-30 | 2009-05-01 | 120 |  |  | 0d |  | Lider Proyecto; Analista 1 [50%]; Analista 2 [50%]; Analista 3 [50%]; Analista 4 [50%] | 10h |  | 1,500 |  |
| 122 | 1.13 | Implementación |  | 13.33d | 2009-05-01 | 2009-05-12 | 121 |  |  | 0d |  | Analista 1; Analista 2; Analista 3; Analista 4; Lider Proyecto [25%] | 120h |  | 3,000 |  |
