# Plan Proyecto 2

Schedule from MS Project, 2005-09-12 to 2006-02-08.
Deloitte

## Calendars

- Estándar: Mon-Fri 08:00-14:00, 15:00-17:00; Sat-Sun off.

## Resources

| Resource |
| --- |
| Analista 1 |
| Analista 2 |
| Analista 3 |
| Analista 4 |
| Programador 1 |
| Programador 2 |
| Programador 3 |
| Programador 4 |
| Tester 1 |
| Tester |
| Migrador de datos |
| Tester 2 |
| Capacitador |
| Instructor |
| Tester 3 |
| Tester 4 |
| Implementador |

## Schedule

| ID | WBS | Task | Duration | Start | Finish | Predecessors | Total slack | Free slack | Resources | Work |
| --- | --- | --- | --- | --- | --- | --- | --- | --- | --- | --- |
| 1 | 1 | **Proyecto Final** | 107.38d? | 2005-09-12 | 2006-02-08 |  | 0d |  |  | 2190h |
| 2 | 1.1 | **Requerimientos** | 3.38d | 2005-09-12 | 2005-09-15 |  | 0d |  |  | 72h |
| 3 | 1.1.1 | Casos de uso PyP | 18h | 2005-09-12 | 2005-09-14 |  | 0d |  | Analista 1 | 18h |
| 4 | 1.1.2 | Casos de uso PyE | 27h | 2005-09-12 | 2005-09-15 |  | 2.25d | 0d | Analista 2 | 27h |
| 5 | 1.1.3 | Casos de uso Facturación | 18h | 2005-09-12 | 2005-09-14 |  | 21.38d | 0d | Analista 3 | 18h |
| 6 | 1.1.4 | Casos de uso HdR | 9h | 2005-09-12 | 2005-09-13 |  | 1.12d | 0d | Analista 4 | 9h |
| 8 | 1.2 | **Análisis** | 6.75d | 2005-09-13 | 2005-09-21 |  | 1.12d |  |  | 120h |
| 9 | 1.2.1 | Modelo de análisis PyP | 24h | 2005-09-14 | 2005-09-19 | 3 | 0d |  | Analista 1 | 24h |
| 10 | 1.2.2 | Modelo de análisis PyE | 36h | 2005-09-15 | 2005-09-21 | 4 | 2.25d |  | Analista 2 | 36h |
| 11 | 1.2.3 | Modelo de análisis Facturación | 24h | 2005-09-14 | 2005-09-19 | 5 | 21.38d | 9d | Analista 3 | 24h |
| 12 | 1.2.4 | Modelo de análisis HdR | 12h | 2005-09-13 | 2005-09-14 | 6 | 1.12d | 0d | Analista 4 | 12h |
| 13 | 1.2.5 | Especificación Req. Soft. | 24h | 2005-09-14 | 2005-09-19 | 12 | 1.12d | 0d | Analista 4 | 24h |
| 15 | 1.3 | **Diseño** | 18.38d | 2005-09-19 | 2005-10-13 |  | 0d |  |  | 288h |
| 16 | 1.3.1 | Modelo de diseño PyP | 72h | 2005-09-19 | 2005-09-30 | 9 | 0d |  | Analista 1 | 72h |
| 17 | 1.3.2 | Modelo de diseño PyE | 108h | 2005-09-26 | 2005-10-13 | 19, 10 | 1.12d | 0d | Analista 2 | 108h |
| 18 | 1.3.3 | Modelo de diseño Facturación | 72h | 2005-09-30 | 2005-10-13 | 16, 11 | 2.25d | 0d | Analista 1 | 72h |
| 19 | 1.3.4 | Modelo de diseño HdR | 36h | 2005-09-19 | 2005-09-26 | 13 | 1.12d | 0d | Analista 2 | 36h |
| 21 | 1.4 | **Desarrollo** | 54.38d | 2005-09-19 | 2005-12-02 |  | 1.12d |  |  | 804h |
| 22 | 1.4.1 | Desarrollo PyP | 192h | 2005-09-30 | 2005-11-03 | 16, 26 | 0d |  | Programador 1 | 192h |
| 23 | 1.4.2 | Desarrollo PyE | 288h | 2005-10-13 | 2005-12-02 | 17 | 1.12d | 0d | Programador 2 | 288h |
| 24 | 1.4.3 | Desarrollo Facturación | 192h | 2005-10-13 | 2005-11-16 | 18, 25 | 2.25d | 0d | Programador 3 | 192h |
| 25 | 1.4.4 | Desarrollo HdR | 96h | 2005-09-26 | 2005-10-12 | 19 | 3.38d | 1.12d | Programador 3 | 96h |
| 26 | 1.4.5 | Preparación datos iniciales | 36h | 2005-09-19 | 2005-09-23 | 11 | 4.5d |  | Migrador de datos | 36h |
| 27 | 1.5 | **Testing y Documentación** | 65.25d | 2005-10-13 | 2006-01-12 |  | 0d |  |  | 578h |
| 28 | 1.5.1 | Pruebas unitarias PyP | 90h | 2005-11-03 | 2005-11-18 | 22, 31 | 0d |  | Tester 1 | 90h |
| 29 | 1.5.2 | Pruebas unitarias PyE | 135h | 2005-12-05 | 2005-12-28 | 23, 30 | 0d |  | Tester 1 | 135h |
| 30 | 1.5.3 | Pruebas unitarias Facturación | 90h | 2005-11-18 | 2005-12-05 | 24, 28 | 0d |  | Tester 1 | 90h |
| 31 | 1.5.4 | Pruebas unitarias HdR | 45h | 2005-10-13 | 2005-10-21 | 25, 17 | 9d |  | Tester 1 | 45h |
| 32 | 1.5.5 | Test integración | 90h | 2005-12-28 | 2006-01-12 | 28, 29, 30, 31 | 0d |  | Tester 2 | 90h |
| 33 | 1.5.6 | Manual de usuario PyP | 32h | 2005-11-18 | 2005-11-24 | 28, 36 | 25.38d | 0d | Instructor | 32h |
| 34 | 1.5.7 | Manual de usuario PyE | 48h | 2005-12-02 | 2005-12-12 | 23, 35 | 18.75d | 0d | Instructor | 48h |
| 35 | 1.5.8 | Manual de usuario Facturación | 32h | 2005-11-24 | 2005-11-30 | 24, 33 | 25.38d | 2.12d | Instructor | 32h |
| 36 | 1.5.9 | Manual de usuario HdR | 16h | 2005-11-16 | 2005-11-18 | 25, 24 | 25.62d | 0.25d | Instructor | 16h |

| ID | WBS | Task | Type | Duration | Start | Finish | Predecessors | Total slack | Free slack | Resources | Work |
| --- | --- | --- | --- | --- | --- | --- | --- | --- | --- | --- | --- |
| 38 | 1.6 | **Implementación** |  | 41.75d? | 2005-12-12 | 2006-02-08 |  | 0d |  |  | 328h |
| 39 | 1.6.1 | Implementación del sistema |  | 40h | 2005-12-29 | 2006-01-05 | 43 | 38.75d |  | Implementador | 40h |
| 40 | 1.6.2 | Cut-over | milestone | 1d? | 2006-01-12 | 2006-01-13 | 32, 39, 42 | 0d |  |  |  |
| 41 | 1.6.3 | Migración de datos |  | 12h | 2006-01-13 | 2006-01-17 | 40 | 0d |  | Migrador de datos | 12h |
| 42 | 1.6.4 | Capacitación |  | 36h | 2005-12-12 | 2005-12-19 | 33, 34, 35, 36 | 52.25d |  | Instructor | 36h |
| 43 | 1.6.5 | Validación |  | 8h | 2005-12-28 | 2005-12-29 | 28, 29, 30, 31 | 38.75d | 0d |  |  |
| 44 | 1.6.6 | Go-live | milestone | 1d | 2006-01-17 | 2006-01-18 | 41 | 0d |  |  |  |
| 45 | 1.6.7 | Soporte técnico |  | 120h | 2006-01-18 | 2006-02-08 | 44 | 0d |  | Programador 1 | 120h |
| 46 | 1.6.8 | Soporte funcional |  | 120h | 2006-01-18 | 2006-02-08 | 44 | 0d |  | Analista 2 | 120h |
