# v1.3

Schedule from MS Project, 2008-09-01 to 2009-09-29, 4 hours a day, costs in $, A marks actual dates.
F.G.E.

## Calendars

- Estándar: Mon-Fri 09:00-13:00, 15:00-19:00; Sat-Sun off. Exceptions (off unless hours are given): 2008-09-09 09:00-13:00.

## Resources

| Resource | Group | Rate |
| --- | --- | --- |
| Analista 1 | Analisis/Diseño | 25 |
| Analista 2 | Analisis/Diseño | 25 |
| Lider Proyecto | Gestión | 50 |
| Desarrollador 1 | Desarrollo | 25 |
| Desarrollador 2 | Desarrollo | 25 |
| Analista 3 | Analisis/Diseño | 25 |
| Analista 4 | Analisis/Diseño | 25 |
| Tester 1 | Test | 25 |
| Tester 2 | Test | 25 |

## Schedule

| ID | WBS | Task | Type | Duration | Start | Finish | Predecessors | Complete | Remaining | Baseline start | Baseline finish | Baseline duration | Total slack | Constraint | Resources | Work | Actual work | Cost | Baseline cost | Actual cost |
| --- | --- | --- | --- | --- | --- | --- | --- | --- | --- | --- | --- | --- | --- | --- | --- | --- | --- | --- | --- | --- |
| 1 | 1 | **Cronograma Proyeto SETI** |  | 562.33d | 2008-09-01 A | 2009-09-29 |  | 98% | 10.41d | 2008-09-01 | 2009-05-20 | 374.33d | 0d |  |  | 2172h | 2128h | 60,100 | 50,400 | 57,800 |
| 2 | 1.1 | **Relevamiento** |  | 18.75d | 2008-09-01 A | 2008-09-12 A |  | 100% |  | 2008-09-01 | 2008-09-12 | 19d |  |  |  | 44h | 44h | 1,300 | 1,300 | 1,300 |
| 3 | 1.1.1 | Relevamiento - Entrevistas |  | 2d | 2008-09-01 A | 2008-09-01 A |  | 100% |  | 2008-09-01 | 2008-09-01 | 2d |  | start no earlier than 2008-09-01 | Analista 1 | 8h | 8h | 200 | 200 | 200 |
| 4 | 1.1.2 | **Documentación Inicial** |  | 16.75d | 2008-09-02 A | 2008-09-12 A |  | 100% |  | 2008-09-02 | 2008-09-12 | 17d |  |  |  | 36h | 36h | 1,100 | 1,100 | 1,100 |
| 5 | 1.1.2.1 | Documentación Inicial - Desarrollo |  | 16d | 2008-09-02 A | 2008-09-11 A | 3 | 100% |  | 2008-09-02 | 2008-09-11 | 16d |  |  | Analista 1 [25%]; Analista 2 [25%]; Analista 3 [25%]; Analista 4 [25%] | 28h | 28h | 700 | 700 | 700 |
| 6 | 1.1.2.2 | Documentación Inicial - Integración |  | 2d | 2008-09-12 A | 2008-09-12 A | 5 | 100% |  | 2008-09-12 | 2008-09-12 | 2d |  |  | Lider Proyecto | 8h | 8h | 400 | 400 | 400 |
| 7 | 1.1.2.3 | Documentacion Inicial - Entrega | milestone | 0d | 2008-09-12 A | 2008-09-12 A | 6 | 100% |  | 2008-09-12 | 2008-09-12 | 0d |  |  | Lider Proyecto |  |  |  |  |  |
| 8 | 1.2 | **Análisis** |  | 46.75d | 2008-09-15 A | 2008-10-16 A | 4 | 100% |  | 2008-09-15 | 2008-10-16 | 47d |  |  |  | 344h | 344h | 9,400 | 9,400 | 9,400 |
| 9 | 1.2.1 | **Casos de Uso de Negocio** |  | 14.75d | 2008-09-15 A | 2008-09-24 A |  | 100% |  | 2008-09-15 | 2008-09-24 | 15d |  |  |  | 88h | 88h | 2,200 | 2,200 | 2,200 |
| 10 | 1.2.1.1 | C.U.Negocio - Clientes |  | 1d | 2008-09-15 A | 2008-09-15 A |  | 100% |  | 2008-09-15 | 2008-09-15 | 1d |  |  | Analista 1 | 4h | 4h | 100 | 100 | 100 |
| 11 | 1.2.1.2 | C.U.Negocio - Proveedores |  | 1d | 2008-09-15 A | 2008-09-15 A |  | 100% |  | 2008-09-15 | 2008-09-15 | 1d |  |  | Analista 2 | 4h | 4h | 100 | 100 | 100 |
| 12 | 1.2.1.3 | C.U.Negocio - Insumos |  | 2d | 2008-09-15 A | 2008-09-15 A |  | 100% |  | 2008-09-15 | 2008-09-15 | 2d |  |  | Analista 3 | 8h | 8h | 200 | 200 | 200 |
| 13 | 1.2.1.4 | C.U.Negocio - Seguridad |  | 6d | 2008-09-15 A | 2008-09-18 A | 11 | 100% |  | 2008-09-15 | 2008-09-18 | 6d |  |  | Analista 3 | 24h | 24h | 600 | 600 | 600 |
| 14 | 1.2.1.5 | C.U.Negocio - Personal Técnico |  | 2d | 2008-09-15 A | 2008-09-16 A | 11 | 100% |  | 2008-09-15 | 2008-09-16 | 2d |  |  | Analista 4 | 8h | 8h | 200 | 200 | 200 |
| 15 | 1.2.1.6 | C.U.Negocio - Gestión Tickets |  | 8d | 2008-09-18 A | 2008-09-24 A | 13 | 100% |  | 2008-09-18 | 2008-09-24 | 8d |  |  | Analista 3 | 32h | 32h | 800 | 800 | 800 |
| 16 | 1.2.1.7 | C.U.Negocio - Alertas |  | 2d | 2008-09-18 A | 2008-09-19 A | 13 | 100% |  | 2008-09-18 | 2008-09-19 | 2d |  |  | Analista 4 | 8h | 8h | 200 | 200 | 200 |
| 17 | 1.2.2 | **Casos de Uso de Sistema** |  | 21.5d | 2008-09-15 A | 2008-09-30 A |  | 100% |  | 2008-09-15 | 2008-09-30 | 22d |  |  |  | 120h | 120h | 3,000 | 3,000 | 3,000 |
| 18 | 1.2.2.1 | C.U.Sistema - Clientes |  | 2d | 2008-09-15 A | 2008-09-16 A | 10 | 100% |  | 2008-09-15 | 2008-09-16 | 2d |  |  | Analista 1 | 8h | 8h | 200 | 200 | 200 |
| 19 | 1.2.2.2 | C.U.Sistema - Proveedores |  | 2d | 2008-09-15 A | 2008-09-16 A | 11 | 100% |  | 2008-09-15 | 2008-09-16 | 2d |  |  | Analista 2 | 8h | 8h | 200 | 200 | 200 |
| 20 | 1.2.2.3 | C.U.Sistema - Insumos |  | 2d | 2008-09-16 A | 2008-09-17 A | 12, 18 | 100% |  | 2008-09-16 | 2008-09-17 | 2d |  |  | Analista 1 | 8h | 8h | 200 | 200 | 200 |
| 21 | 1.2.2.4 | C.U.Sistema - Seguridad |  | 8d | 2008-09-18 A | 2008-09-24 A | 19, 13 | 100% |  | 2008-09-18 | 2008-09-24 | 8d |  |  | Analista 2 | 32h | 32h | 800 | 800 | 800 |
| 22 | 1.2.2.5 | C.U.Sistema - Personal Técnico |  | 2d | 2008-09-16 A | 2008-09-17 A | 19, 14 | 100% |  | 2008-09-16 | 2008-09-17 | 2d |  |  | Analista 4 | 8h | 8h | 200 | 200 | 200 |
| 23 | 1.2.2.6 | C.U.Sistema - Gestión Tickets |  | 8d | 2008-09-24 A | 2008-09-30 A | 21, 15 | 100% |  | 2008-09-24 | 2008-09-30 | 8d |  |  | Analista 1 | 32h | 32h | 800 | 800 | 800 |
| 24 | 1.2.2.7 | C.U.Sistema - Alertas |  | 6d | 2008-09-24 A | 2008-09-29 A | 21, 16 | 100% |  | 2008-09-24 | 2008-09-29 | 6d |  |  | Analista 4 | 24h | 24h | 600 | 600 | 600 |

Notes:
- 20: Dependencia de la 18 por Solapamiento de Recursos

| ID | WBS | Task | Type | Duration | Start | Finish | Predecessors | Complete | Baseline start | Baseline finish | Baseline duration | Constraint | Resources | Work | Actual work | Cost | Baseline cost | Actual cost |
| --- | --- | --- | --- | --- | --- | --- | --- | --- | --- | --- | --- | --- | --- | --- | --- | --- | --- | --- |
| 25 | 1.2.3 | **Modelo de Análisis** |  | 3.5d | 2008-09-30 A | 2008-10-02 A | 17 | 100% | 2008-09-30 | 2008-10-02 | 4d |  |  | 16h | 16h | 800 | 800 | 800 |
| 26 | 1.2.3.1 | Modelo de Análisis - Integración Documentación |  | 4d | 2008-09-30 A | 2008-10-02 A |  | 100% | 2008-09-30 | 2008-10-02 | 4d |  | Lider Proyecto | 16h | 16h | 800 | 800 | 800 |
| 27 | 1.2.3.2 | Modelo de Análisis - Entrega | milestone | 0d | 2008-10-02 A | 2008-10-02 A | 26 | 100% | 2008-10-02 | 2008-10-02 | 0d |  | Lider Proyecto |  |  |  |  |  |
| 28 | 1.2.4 | **Modelo de Testing** |  | 19.5d | 2008-10-02 A | 2008-10-16 A | 25 | 100% | 2008-10-02 | 2008-10-16 | 20d |  |  | 120h | 120h | 3,400 | 3,400 | 3,400 |
| 29 | 1.2.4.1 | Mod.Testing - Clientes |  | 2d | 2008-10-02 A | 2008-10-03 A |  | 100% | 2008-10-02 | 2008-10-03 | 2d |  | Analista 1 | 8h | 8h | 200 | 200 | 200 |
| 30 | 1.2.4.2 | Mod.Testing - Proveedores |  | 2d | 2008-10-03 A | 2008-10-06 A | 29 | 100% | 2008-10-03 | 2008-10-06 | 2d |  | Analista 2 | 8h | 8h | 200 | 200 | 200 |
| 31 | 1.2.4.3 | Mod.Testing - Insumos |  | 2d | 2008-10-03 A | 2008-10-06 A | 29 | 100% | 2008-10-03 | 2008-10-06 | 2d |  | Analista 3 | 8h | 8h | 200 | 200 | 200 |
| 32 | 1.2.4.4 | Mod.Testing - Seguridad |  | 6d | 2008-10-06 A | 2008-10-09 A | 30 | 100% | 2008-10-06 | 2008-10-09 | 6d |  | Analista 1 | 24h | 24h | 600 | 600 | 600 |
| 33 | 1.2.4.5 | Mod.Testing - Personal Técnico |  | 2d | 2008-10-06 A | 2008-10-07 A | 30 | 100% | 2008-10-06 | 2008-10-07 | 2d |  | Analista 4 | 8h | 8h | 200 | 200 | 200 |
| 34 | 1.2.4.6 | Mod.Testing - Gestión Tickets |  | 6d | 2008-10-09 A | 2008-10-14 A | 32 | 100% | 2008-10-09 | 2008-10-14 | 6d |  | Analista 2 | 24h | 24h | 600 | 600 | 600 |
| 35 | 1.2.4.7 | Mod.Testing - Alertas |  | 6d | 2008-10-09 A | 2008-10-14 A | 32 | 100% | 2008-10-09 | 2008-10-14 | 6d |  | Analista 4 | 24h | 24h | 600 | 600 | 600 |
| 36 | 1.2.4.8 | Mod.Testing - Integración Documentación |  | 4d | 2008-10-14 A | 2008-10-16 A | 35 | 100% | 2008-10-14 | 2008-10-16 | 4d |  | Lider Proyecto | 16h | 16h | 800 | 800 | 800 |
| 37 | 1.2.4.9 | Mod.Testing - Entrega | milestone | 0d | 2008-10-16 A | 2008-10-16 A | 36 | 100% | 2008-10-16 | 2008-10-16 | 0d |  | Lider Proyecto |  |  |  |  |  |
| 38 | 1.3 | **Diseño** |  | 29.5d | 2008-10-16 A | 2008-11-06 A | 28 | 100% | 2008-10-16 | 2008-11-06 | 30d |  |  | 120h | 120h | 3,600 | 3,600 | 3,600 |
| 39 | 1.3.1 | Diseño - Diagrama de Clases |  | 6d | 2008-10-16 A | 2008-10-21 A |  | 100% | 2008-10-16 | 2008-10-21 | 6d |  | Analista 1 | 24h | 24h | 600 | 600 | 600 |
| 40 | 1.3.2 | Diseño - Diagrama de Interacción |  | 6d | 2008-10-21 A | 2008-10-24 A | 39 | 100% | 2008-10-21 | 2008-10-24 | 6d |  | Analista 2 | 24h | 24h | 600 | 600 | 600 |
| 41 | 1.3.3 | Diseño - Diagrama de Secuencia |  | 6d | 2008-10-24 A | 2008-10-29 A | 40 | 100% | 2008-10-24 | 2008-10-29 | 6d |  | Analista 3 | 24h | 24h | 600 | 600 | 600 |
| 42 | 1.3.4 | Diseño - Diagrama de Entidad Relación |  | 6d | 2008-10-29 A | 2008-11-03 A | 41 | 100% | 2008-10-29 | 2008-11-03 | 6d |  | Analista 4 | 24h | 24h | 600 | 600 | 600 |
| 43 | 1.3.5 | Diseño - Integración Documentación |  | 6d | 2008-11-03 A | 2008-11-06 A | 42 | 100% | 2008-11-03 | 2008-11-06 | 6d |  | Lider Proyecto | 24h | 24h | 1,200 | 1,200 | 1,200 |
| 44 | 1.3.6 | Diseño - Entrega | milestone | 0d | 2008-11-06 A | 2008-11-06 A | 43 | 100% | 2008-11-06 | 2008-11-06 | 0d | finish no earlier than 2008-10-02 | Lider Proyecto |  |  |  |  |  |
| 45 | 1.4 | Revisión de Entregas Realizadas |  | 30d | 2008-11-06 A | 2008-11-27 A | 2, 8, 38 | 100% | 2008-11-06 | 2008-11-27 | 30d |  | Lider Proyecto | 120h | 120h | 6,000 | 6,000 | 6,000 |
| 46 | 1.5 | Aprobación de la Cursada | milestone | 0d | 2008-11-27 A | 2008-11-27 A | 45 | 100% | 2008-11-27 | 2008-11-27 | 0d |  |  |  |  |  |  |  |
| 47 | 1.6 | **Desarrollo** |  | 283.58d | 2009-01-05 A | 2009-07-21 A | 45 | 100% | 2008-11-27 | 2009-04-10 | 191.33d |  |  | 1120h | 1120h | 28,000 | 18,800 | 28,000 |
| 48 | 1.6.1 | **Construcción Base de Datos** |  | 23.58d | 2009-01-05 A | 2009-01-20 A |  | 100% | 2008-11-27 | 2008-12-15 | 23.33d |  |  | 80h | 80h | 2,000 | 2,000 | 2,000 |
| 49 | 1.6.1.1 | Generación Tablas |  | 13.33d | 2009-01-05 A | 2009-01-13 A |  | 100% | 2008-11-27 | 2008-12-08 | 13.33d | start no earlier than 2009-01-05 | Desarrollador 1 [50%]; Desarrollador 2 [50%] | 40h | 40h | 1,000 | 1,000 | 1,000 |
| 50 | 1.6.1.2 | Poblado y Resguardo |  | 10d | 2009-01-13 A | 2009-01-20 A | 49 | 100% | 2008-12-08 | 2008-12-15 | 10d |  | Desarrollador 2 [50%]; Desarrollador 1 [50%] | 40h | 40h | 1,000 | 1,000 | 1,000 |

| ID | WBS | Task | Duration | Start | Finish | Predecessors | Complete | Baseline start | Baseline finish | Baseline duration | Resources | Work | Actual work | Cost | Baseline cost | Actual cost |
| --- | --- | --- | --- | --- | --- | --- | --- | --- | --- | --- | --- | --- | --- | --- | --- | --- |
| 51 | 1.6.2 | **Módulo Clientes** | 10d | 2009-01-20 A | 2009-01-27 A | 48 | 100% | 2008-12-15 | 2008-12-22 | 10d |  | 40h | 40h | 1,000 | 1,000 | 1,000 |
| 52 | 1.6.2.1 | Clientes - Alta | 2d | 2009-01-20 A | 2009-01-21 A |  | 100% | 2008-12-15 | 2008-12-16 | 2d | Desarrollador 1 [50%]; Desarrollador 2 [50%] | 8h | 8h | 200 | 200 | 200 |
| 53 | 1.6.2.2 | Clientes - Baja | 2d | 2009-01-21 A | 2009-01-22 A | 52 | 100% | 2008-12-16 | 2008-12-17 | 2d | Desarrollador 1 [50%]; Desarrollador 2 [50%] | 8h | 8h | 200 | 200 | 200 |
| 54 | 1.6.2.3 | Clientes - Modificación | 2d | 2009-01-22 A | 2009-01-23 A | 53 | 100% | 2008-12-17 | 2008-12-18 | 2d | Desarrollador 1 [50%]; Desarrollador 2 [50%] | 8h | 8h | 200 | 200 | 200 |
| 55 | 1.6.2.4 | Clientes - Consulta | 2d | 2009-01-23 A | 2009-01-26 A | 54 | 100% | 2008-12-18 | 2008-12-19 | 2d | Desarrollador 1 [50%]; Desarrollador 2 [50%] | 8h | 8h | 200 | 200 | 200 |
| 56 | 1.6.2.5 | Clientes - Prueba Unitaria | 2d | 2009-01-26 A | 2009-01-27 A | 55 | 100% | 2008-12-19 | 2008-12-22 | 2d | Tester 1 [50%]; Tester 2 [50%] | 8h | 8h | 200 | 200 | 200 |
| 57 | 1.6.3 | **Módulo Proveedores** | 10d | 2009-01-27 A | 2009-02-03 A | 51 | 100% | 2008-12-22 | 2008-12-29 | 10d |  | 40h | 40h | 1,000 | 1,000 | 1,000 |
| 58 | 1.6.3.1 | Proveedores - Alta | 2d | 2009-01-27 A | 2009-01-28 A |  | 100% | 2008-12-22 | 2008-12-23 | 2d | Desarrollador 1 [50%]; Desarrollador 2 [50%] | 8h | 8h | 200 | 200 | 200 |
| 59 | 1.6.3.2 | Proveedores - Baja | 2d | 2009-01-28 A | 2009-01-29 A | 58 | 100% | 2008-12-23 | 2008-12-24 | 2d | Desarrollador 1 [50%]; Desarrollador 2 [50%] | 8h | 8h | 200 | 200 | 200 |
| 60 | 1.6.3.3 | Proveedores - Modificación | 2d | 2009-01-29 A | 2009-01-30 A | 59 | 100% | 2008-12-24 | 2008-12-25 | 2d | Desarrollador 1 [50%]; Desarrollador 2 [50%] | 8h | 8h | 200 | 200 | 200 |
| 61 | 1.6.3.4 | Proveedores - Consulta | 2d | 2009-01-30 A | 2009-02-02 A | 60 | 100% | 2008-12-25 | 2008-12-26 | 2d | Desarrollador 1 [50%]; Desarrollador 2 [50%] | 8h | 8h | 200 | 200 | 200 |
| 62 | 1.6.3.5 | Proveedores - Prueba Unitaria | 2d | 2009-02-02 A | 2009-02-03 A | 61 | 100% | 2008-12-26 | 2008-12-29 | 2d | Tester 1 [50%]; Tester 2 [50%] | 8h | 8h | 200 | 200 | 200 |
| 63 | 1.6.4 | **Módulo Insumos** | 10d | 2009-02-03 A | 2009-02-10 A | 57 | 100% | 2008-12-29 | 2009-01-05 | 10d |  | 40h | 40h | 1,000 | 1,000 | 1,000 |
| 64 | 1.6.4.1 | Insumos - Alta | 2d | 2009-02-03 A | 2009-02-04 A |  | 100% | 2008-12-29 | 2008-12-30 | 2d | Desarrollador 1 [50%]; Desarrollador 2 [50%] | 8h | 8h | 200 | 200 | 200 |
| 65 | 1.6.4.2 | Insumos - Baja | 2d | 2009-02-04 A | 2009-02-05 A | 64 | 100% | 2008-12-30 | 2008-12-31 | 2d | Desarrollador 1 [50%]; Desarrollador 2 [50%] | 8h | 8h | 200 | 200 | 200 |
| 66 | 1.6.4.3 | Insumos - Modificación | 2d | 2009-02-05 A | 2009-02-06 A | 65 | 100% | 2008-12-31 | 2009-01-01 | 2d | Desarrollador 1 [50%]; Desarrollador 2 [50%] | 8h | 8h | 200 | 200 | 200 |
| 67 | 1.6.4.4 | Insumos - Consulta | 2d | 2009-02-06 A | 2009-02-09 A | 66 | 100% | 2009-01-01 | 2009-01-02 | 2d | Desarrollador 1 [50%]; Desarrollador 2 [50%] | 8h | 8h | 200 | 200 | 200 |
| 68 | 1.6.4.5 | Insumos - Prueba Unitaria | 2d | 2009-02-09 A | 2009-02-10 A | 67 | 100% | 2009-01-02 | 2009-01-05 | 2d | Tester 1 [50%]; Tester 2 [50%] | 8h | 8h | 200 | 200 | 200 |
| 69 | 1.6.5 | **Módulo Seguridad** | 68d | 2009-02-10 A | 2009-03-30 A | 63 | 100% | 2009-01-05 | 2009-01-26 | 30d |  | 272h | 272h | 6,800 | 3,000 | 6,800 |
| 70 | 1.6.5.1 | **Submódulo Usuarios** | 10d | 2009-02-10 A | 2009-02-17 A |  | 100% | 2009-01-05 | 2009-01-12 | 10d |  | 40h | 40h | 1,000 | 1,000 | 1,000 |
| 71 | 1.6.5.1.1 | Usuarios - Alta | 2d | 2009-02-10 A | 2009-02-11 A |  | 100% | 2009-01-05 | 2009-01-06 | 2d | Desarrollador 1 [50%]; Desarrollador 2 [50%] | 8h | 8h | 200 | 200 | 200 |
| 72 | 1.6.5.1.2 | Usuarios - Baja | 2d | 2009-02-11 A | 2009-02-12 A | 71 | 100% | 2009-01-06 | 2009-01-07 | 2d | Desarrollador 1 [50%]; Desarrollador 2 [50%] | 8h | 8h | 200 | 200 | 200 |
| 73 | 1.6.5.1.3 | Usuarios - Modificación | 2d | 2009-02-12 A | 2009-02-13 A | 72 | 100% | 2009-01-07 | 2009-01-08 | 2d | Desarrollador 1 [50%]; Desarrollador 2 [50%] | 8h | 8h | 200 | 200 | 200 |
| 74 | 1.6.5.1.4 | Usuarios - Consulta | 2d | 2009-02-13 A | 2009-02-16 A | 73 | 100% | 2009-01-08 | 2009-01-09 | 2d | Desarrollador 1 [50%]; Desarrollador 2 [50%] | 8h | 8h | 200 | 200 | 200 |
| 75 | 1.6.5.1.5 | Usuarios - Prueba Unitaria | 2d | 2009-02-16 A | 2009-02-17 A | 74 | 100% | 2009-01-09 | 2009-01-12 | 2d | Tester 1 [50%]; Tester 2 [50%] | 8h | 8h | 200 | 200 | 200 |

| ID | WBS | Task | Duration | Start | Finish | Predecessors | Complete | Baseline start | Baseline finish | Baseline duration | Resources | Work | Actual work | Cost | Baseline cost | Actual cost |
| --- | --- | --- | --- | --- | --- | --- | --- | --- | --- | --- | --- | --- | --- | --- | --- | --- |
| 76 | 1.6.5.2 | **Submódulo Perfiles** | 34.75d | 2009-02-17 A | 2009-03-13 A | 70 | 100% | 2009-01-12 | 2009-01-19 | 10d |  | 140h | 140h | 3,500 | 1,000 | 3,500 |
| 77 | 1.6.5.2.1 | Perfiles - Alta | 5d | 2009-02-17 A | 2009-02-20 A |  | 100% | 2009-01-12 | 2009-01-13 | 2d | Desarrollador 1 [50%]; Desarrollador 2 [50%] | 20h | 20h | 500 | 200 | 500 |
| 78 | 1.6.5.2.2 | Perfiles - Baja | 5d | 2009-02-20 A | 2009-02-24 A | 77 | 100% | 2009-01-13 | 2009-01-14 | 2d | Desarrollador 1 [50%]; Desarrollador 2 [50%] | 20h | 20h | 500 | 200 | 500 |
| 79 | 1.6.5.2.3 | Perfiles - Modificación | 5d | 2009-02-24 A | 2009-02-27 A | 78 | 100% | 2009-01-14 | 2009-01-15 | 2d | Desarrollador 1 [50%]; Desarrollador 2 [50%] | 20h | 20h | 500 | 200 | 500 |
| 80 | 1.6.5.2.4 | Perfiles - Consulta | 5d | 2009-02-27 A | 2009-03-03 A | 79 | 100% | 2009-01-15 | 2009-01-16 | 2d | Desarrollador 1 [50%]; Desarrollador 2 [50%] | 20h | 20h | 500 | 200 | 500 |
| 81 | 1.6.5.2.5 | Perfiles - Prueba Unitaria | 15d | 2009-03-03 A | 2009-03-13 A | 80 | 100% | 2009-01-16 | 2009-01-19 | 2d | Tester 1 [50%]; Tester 2 [50%] | 60h | 60h | 1,500 | 200 | 1,500 |
| 82 | 1.6.5.3 | **Submódulo Gestión de Seguridad** | 23.25d | 2009-03-13 A | 2009-03-30 A | 76 | 100% | 2009-01-19 | 2009-01-26 | 10d |  | 92h | 92h | 2,300 | 1,000 | 2,300 |
| 83 | 1.6.5.3.1 | Gestión Seguridad - Consulta | 15d | 2009-03-13 A | 2009-03-24 A |  | 100% | 2009-01-19 | 2009-01-21 | 4d | Desarrollador 1 [50%]; Desarrollador 2 [50%] | 60h | 60h | 1,500 | 400 | 1,500 |
| 84 | 1.6.5.3.2 | Gestión de Seguridad - Asignación a Perfiles | 8d | 2009-03-24 A | 2009-03-30 A | 83 | 100% | 2009-01-21 | 2009-01-26 | 6d | Desarrollador 1 [50%]; Desarrollador 2 [50%] | 32h | 32h | 800 | 600 | 800 |
| 85 | 1.6.6 | **Módulo Personal Técnico** | 10d | 2009-03-30 A | 2009-04-06 A | 69 | 100% | 2009-01-26 | 2009-02-02 | 10d |  | 40h | 40h | 1,000 | 1,000 | 1,000 |
| 86 | 1.6.6.1 | Personal Técnico - Alta | 2d | 2009-03-30 A | 2009-03-31 A |  | 100% | 2009-01-26 | 2009-01-27 | 2d | Desarrollador 1 [50%]; Desarrollador 2 [50%] | 8h | 8h | 200 | 200 | 200 |
| 87 | 1.6.6.2 | Personal Técnico - Baja | 2d | 2009-03-31 A | 2009-04-01 A | 86 | 100% | 2009-01-27 | 2009-01-28 | 2d | Desarrollador 1 [50%]; Desarrollador 2 [50%] | 8h | 8h | 200 | 200 | 200 |
| 88 | 1.6.6.3 | Personal Técnico - Modificación | 2d | 2009-04-01 A | 2009-04-02 A | 87 | 100% | 2009-01-28 | 2009-01-29 | 2d | Desarrollador 1 [50%]; Desarrollador 2 [50%] | 8h | 8h | 200 | 200 | 200 |
| 89 | 1.6.6.4 | Personal Técnico - Consulta | 2d | 2009-04-02 A | 2009-04-03 A | 88 | 100% | 2009-01-29 | 2009-01-30 | 2d | Desarrollador 1 [50%]; Desarrollador 2 [50%] | 8h | 8h | 200 | 200 | 200 |
| 90 | 1.6.6.5 | Personal Técnico - Prueba Unitaria | 2d | 2009-04-03 A | 2009-04-06 A | 89 | 100% | 2009-01-30 | 2009-02-02 | 2d | Tester 1 [50%]; Tester 2 [50%] | 8h | 8h | 200 | 200 | 200 |
| 91 | 1.6.7 | **Módulo Gestión de Tickets** | 42d | 2009-04-06 A | 2009-05-05 A | 85 | 100% | 2009-02-02 | 2009-03-03 | 42d |  | 168h | 168h | 4,200 | 4,200 | 4,200 |
| 92 | 1.6.7.1 | **Alta** | 24d | 2009-04-06 A | 2009-04-22 A |  | 100% | 2009-02-02 | 2009-02-18 | 24d |  | 96h | 96h | 2,400 | 2,400 | 2,400 |
| 93 | 1.6.7.1.1 | Alta - Generación de Presupuesto | 10d | 2009-04-06 A | 2009-04-13 A |  | 100% | 2009-02-02 | 2009-02-09 | 10d | Desarrollador 1 [50%]; Desarrollador 2 [50%] | 40h | 40h | 1,000 | 1,000 | 1,000 |
| 94 | 1.6.7.1.2 | Alta - Asignación a Técnico | 4d | 2009-04-13 A | 2009-04-15 A | 93 | 100% | 2009-02-09 | 2009-02-11 | 4d | Desarrollador 1 [50%]; Desarrollador 2 [50%] | 16h | 16h | 400 | 400 | 400 |
| 95 | 1.6.7.1.3 | Alta - Asignación de Estados | 10d | 2009-04-15 A | 2009-04-22 A | 94 | 100% | 2009-02-11 | 2009-02-18 | 10d | Desarrollador 1 [50%]; Desarrollador 2 [50%] | 40h | 40h | 1,000 | 1,000 | 1,000 |
| 96 | 1.6.7.2 | **Modificación** | 8d | 2009-04-22 A | 2009-04-28 A | 92 | 100% | 2009-02-18 | 2009-02-24 | 8d |  | 32h | 32h | 800 | 800 | 800 |
| 97 | 1.6.7.2.1 | Modificación - Presupuesto | 4d | 2009-04-22 A | 2009-04-24 A |  | 100% | 2009-02-18 | 2009-02-20 | 4d | Desarrollador 1 [50%]; Desarrollador 2 [50%] | 16h | 16h | 400 | 400 | 400 |
| 98 | 1.6.7.2.2 | Modificación - Asignación a Técnico | 2d | 2009-04-24 A | 2009-04-27 A | 97 | 100% | 2009-02-20 | 2009-02-23 | 2d | Desarrollador 1 [50%]; Desarrollador 2 [50%] | 8h | 8h | 200 | 200 | 200 |
| 99 | 1.6.7.2.3 | Modificación - Estados | 2d | 2009-04-27 A | 2009-04-28 A | 98 | 100% | 2009-02-23 | 2009-02-24 | 2d | Desarrollador 1 [50%]; Desarrollador 2 [50%] | 8h | 8h | 200 | 200 | 200 |
| 100 | 1.6.7.3 | Gestión de Tickets - Consulta | 4d | 2009-04-28 A | 2009-04-30 A | 99 | 100% | 2009-02-24 | 2009-02-26 | 4d | Desarrollador 1 [50%]; Desarrollador 2 [50%] | 16h | 16h | 400 | 400 | 400 |
| 101 | 1.6.7.4 | Gestión de Tickets - Prueba Unitaria | 6d | 2009-04-30 A | 2009-05-05 A | 100 | 100% | 2009-02-26 | 2009-03-03 | 6d | Tester 1 [50%]; Tester 2 [50%] | 24h | 24h | 600 | 600 | 600 |

| ID | WBS | Task | Type | Duration | Start | Finish | Predecessors | Complete | Baseline start | Baseline finish | Baseline duration | Total slack | Constraint | Resources | Work | Actual work | Cost | Baseline cost | Actual cost |
| --- | --- | --- | --- | --- | --- | --- | --- | --- | --- | --- | --- | --- | --- | --- | --- | --- | --- | --- | --- |
| 102 | 1.6.8 | **Módulo Alertas** |  | 60d | 2009-05-05 A | 2009-06-16 A | 91 | 100% | 2009-03-03 | 2009-03-20 | 26d |  |  |  | 240h | 240h | 6,000 | 2,600 | 6,000 |
| 103 | 1.6.8.1 | Módulo Alertas - Configuración |  | 20d | 2009-05-05 A | 2009-05-19 A |  | 100% | 2009-03-03 | 2009-03-10 | 10d |  |  | Desarrollador 1 [50%]; Desarrollador 2 [50%] | 80h | 80h | 2,000 | 1,000 | 2,000 |
| 104 | 1.6.8.2 | Módulo Alertas - Proceso Batch |  | 20d | 2009-05-19 A | 2009-06-02 A | 103 | 100% | 2009-03-10 | 2009-03-17 | 10d |  |  | Desarrollador 1 [50%]; Desarrollador 2 [50%] | 80h | 80h | 2,000 | 1,000 | 2,000 |
| 105 | 1.6.8.3 | Módulo Alertas - Prueba Unitaria |  | 20d | 2009-06-02 A | 2009-06-16 A | 104 | 100% | 2009-03-17 | 2009-03-20 | 6d |  |  | Tester 1 [50%]; Tester 2 [50%] | 80h | 80h | 2,000 | 600 | 2,000 |
| 106 | 1.6.9 | **Módulo Reportes** |  | 50d | 2009-06-16 A | 2009-07-21 A | 102 | 100% | 2009-03-20 | 2009-04-10 | 30d |  |  |  | 200h | 200h | 5,000 | 3,000 | 5,000 |
| 107 | 1.6.9.1 | Módulo Reportes - Desarrollo |  | 35d | 2009-06-16 A | 2009-07-10 A |  | 100% | 2009-03-20 | 2009-04-03 | 20d |  |  | Desarrollador 1 [50%]; Desarrollador 2 [50%] | 140h | 140h | 3,500 | 2,000 | 3,500 |
| 108 | 1.6.9.2 | Módulo Reportes - Prueba Unitaria |  | 15d | 2009-07-10 A | 2009-07-21 A | 107 | 100% | 2009-04-03 | 2009-04-10 | 10d |  |  | Tester 1 [50%]; Tester 2 [50%] | 60h | 60h | 1,500 | 1,000 | 1,500 |
| 109 | 1.7 | Integración |  | 10d | 2009-07-21 A | 2009-07-28 A | 91, 102, 106 | 100% | 2009-04-10 | 2009-04-17 | 10d |  | start no earlier than 2009-06-01 | Desarrollador 1 [50%]; Desarrollador 2 [50%] | 40h | 40h | 1,000 | 1,000 | 1,000 |
| 110 | 1.8 | Pruebas de Integración |  | 63d | 2009-07-28 A | 2009-09-10 A | 109 | 100% | 2009-04-17 | 2009-05-01 | 20d |  |  | Tester 1 [19.8%]; Tester 2 [19.8%] | 100h | 100h | 2,500 | 2,000 | 2,500 |
| 111 | 1.9 | **Armar producto** |  | 20d | 2009-09-10 A | 2009-09-24 A | 110 | 100% | 2009-05-01 | 2009-05-15 | 20d |  |  |  | 240h | 240h | 6,000 | 6,000 | 6,000 |
| 112 | 1.9.1 | Instalador |  | 10d | 2009-09-10 A | 2009-09-17 A |  | 100% | 2009-05-01 | 2009-05-08 | 10d |  |  | Desarrollador 1 | 40h | 40h | 1,000 | 1,000 | 1,000 |
| 113 | 1.9.2 | Manual de instalación |  | 10d | 2009-09-17 A | 2009-09-24 A | 112 | 100% | 2009-05-08 | 2009-05-15 | 10d |  |  | Desarrollador 1 | 40h | 40h | 1,000 | 1,000 | 1,000 |
| 114 | 1.9.3 | Packaging |  | 20d | 2009-09-10 A | 2009-09-24 A |  | 100% | 2009-05-01 | 2009-05-15 | 20d |  |  | Analista 1 | 80h | 80h | 2,000 | 2,000 | 2,000 |
| 115 | 1.9.4 | Manual de usuario |  | 20d | 2009-09-10 A | 2009-09-24 A |  | 100% | 2009-05-01 | 2009-05-15 | 20d |  |  | Analista 2 | 80h | 80h | 2,000 | 2,000 | 2,000 |
| 116 | 1.10 | Producto Terminado - Entregable | milestone | 1d | 2009-09-24 A | 2009-09-24 A | 114 | 100% | 2009-05-15 | 2009-05-15 | 1d |  |  |  |  |  |  |  |  |
| 117 | 1.11 | Capacitación |  | 5d | 2009-09-24 | 2009-09-29 | 116 |  | 2009-05-15 | 2009-05-20 | 5d | 1d |  | Analista 1 | 20h |  | 1,700 | 1,700 |  |
| 118 | 1.12 | Implementación |  | 6d | 2009-09-24 | 2009-09-29 | 116 |  | 2009-05-15 | 2009-05-20 | 6d | 0d |  | Analista 2 | 24h |  | 600 | 600 |  |
